# Office Move

Schedule from MS Project, 2013-07-31 to 2014-03-25.

## Calendars

- Standard: Mon-Fri 08:00-12:00, 13:00-17:00; Sat-Sun off.

## Resources

| Resource |
| --- |
| Relo PM |
| Office manager |
| Telecom admin |
| Network mgr |
| Mailroom |
| Accounting mgr |
| Local phone company |
| Cleaning service |
| Webmaster |
| Movers |
| Telecommunications administrator |
| Mailroom administrator |
| Architect |

## Schedule

| ID | WBS | Task | Type | Duration | Start | Finish | Predecessors | Total slack | Free slack | Constraint | Resources | Work |
| --- | --- | --- | --- | --- | --- | --- | --- | --- | --- | --- | --- | --- |
| 1 | 1 | **Planning Move** |  | 90d | 2013-07-31 | 2013-12-03 |  |  |  |  |  | 760h |
| 2 | 1.1 | **Document requirements** |  | 40d | 2013-07-31 | 2013-09-24 |  | 0d |  |  |  | 120h |
| 3 | 1.1.1 | Identify requirements |  | 25d | 2013-07-31 | 2013-09-03 |  | 0d |  |  |  |  |
| 4 | 1.1.2 | Draft budget |  | 15d | 2013-09-04 | 2013-09-24 | 3 | 0d |  |  | Relo PM | 120h |
| 5 | 1.1.3 | Review requirements with management | manual | 1d | 2013-09-15 | 2013-09-15 |  |  |  |  |  |  |
| 6 | 1.2 | **Choose new location** |  | 50d | 2013-07-31 | 2013-10-08 |  | 0d |  |  |  | 520h |
| 7 | 1.2.1 | **Evaluate lease sites** |  | 50d | 2013-07-31 | 2013-10-08 |  | 0d |  |  |  | 520h |
| 8 | 1.2.1.1 | Identify potential sites | manual | 20d | 2013-07-31 | 2013-08-27 | 3 |  |  | start no earlier than 2013-10-01 | Relo PM | 160h |
| 9 | 1.2.1.2 | Identify tenant improvements |  | 7.5d | 2013-07-31 | 2013-08-09 |  | 42.5d |  |  | Office manager; Relo PM | 120h |
| 10 | 1.2.1.3 | Obtain estimates for tenant improvements |  | 10d | 2013-07-31 | 2013-08-13 |  | 35d | 0d |  | Office manager | 80h |
| 11 | 1.2.1.4 | Select site |  | 10d | 2013-09-25 | 2013-10-08 | 4 | 0d |  |  | Relo PM | 80h |
| 12 | 1.2.1.5 | Finalize lease |  | 10d | 2013-07-31 | 2013-08-13 |  | 40d |  |  | Relo PM | 80h |
| 13 | 1.3 | **Identify costs** |  | 10d | 2013-07-31 | 2013-08-13 |  | 40d |  |  |  | 80h |
| 14 | 1.3.1 | Identify additional costs (furniture, equipment) |  | 10d | 2013-07-31 | 2013-08-13 |  | 40d |  |  | Relo PM | 80h |
| 15 | 1.4 | Hire contractors for major tenant improvements |  | 5d | 2013-08-14 | 2013-08-20 | 10 | 35d |  |  | Relo PM | 40h |
| 16 | 1.5 | Planning complete | milestone | 0d | 2013-10-08 | 2013-10-08 | 8, 11, 12, 9, 14, 15 | 0d |  |  |  |  |
| 17 | 2 | **Construct and set up space** |  | 102d | 2013-10-09 | 2014-02-27 | 16 | 0d |  |  |  | 936h |
| 18 | 2.1 | **Prep phone system** |  | 5d | 2013-10-09 | 2013-10-15 | 16 | 93d |  |  |  | 40h |
| 19 | 2.1.1 | Review phone system requirements |  | 3d | 2013-10-09 | 2013-10-11 |  | 93d | 0d |  | Telecom admin | 24h |
| 20 | 2.1.2 | Order new phone numbers |  | 1d | 2013-10-14 | 2013-10-14 | 19 | 93d | 0d |  | Telecom admin | 8h |
| 21 | 2.1.3 | Order long-distance service |  | 1d | 2013-10-15 | 2013-10-15 | 20 | 93d | 0d |  | Telecom admin | 8h |
| 22 | 2.1.4 | Phone lines ordered | milestone | 0d | 2013-10-15 | 2013-10-15 | 21 | 93d | 87d |  |  |  |
| 23 | 2.2 | **Design and construction** |  | 98d | 2013-10-09 | 2014-02-21 |  | 0d |  |  |  | 344h |
| 24 | 2.2.1 | **Design space** |  | 66d | 2013-10-09 | 2014-01-08 |  | 0d |  |  |  | 320h |
| 25 | 2.2.1.1 | Design office space |  | 25d | 2013-10-09 | 2013-11-12 | 16 | 0d |  |  | Office manager [50%]; Architect | 200h |
| 26 | 2.2.1.2 | Prepare drawings |  | 5d | 2013-11-13 | 2013-11-19 | 25 | 0d |  |  | Architect | 40h |
| 27 | 2.2.1.3 | Design IT infrastructure |  | 10d | 2013-11-20 | 2013-12-03 | 26 | 0d |  |  | Network mgr | 80h |
| 28 | 2.2.1.4 | Obtain final budget estimates |  | 10d | 2013-12-04 | 2013-12-17 | 27 | 0d |  |  |  |  |
| 29 | 2.2.1.5 | Sign off on plans |  | 1d | 2013-12-18 | 2013-12-18 | 28 | 0d |  |  |  |  |
| 30 | 2.2.1.6 | Obtain permits |  | 3w | 2013-12-19 | 2014-01-08 | 29 | 0d |  |  |  |  |

| ID | WBS | Task | Type | Duration | Start | Finish | Predecessors | Total slack | Free slack | Resources | Work |
| --- | --- | --- | --- | --- | --- | --- | --- | --- | --- | --- | --- |
| 31 | 2.2.2 | **Construction** |  | 20d | 2014-01-09 | 2014-02-05 | 30 | 0d |  |  |  |
| 32 | 2.2.2.1 | Demolish walls |  | 5d | 2014-01-09 | 2014-01-15 |  | 0d |  |  |  |
| 33 | 2.2.2.2 | Construct new walls |  | 15d | 2014-01-16 | 2014-02-05 | 32 | 0d |  |  |  |
| 34 | 2.2.2.3 | Elec, mech, HVAC |  | 15d | 2014-01-16 | 2014-02-05 | 32 | 0d |  |  |  |
| 35 | 2.2.3 | **Walkthrough and repair** |  | 12d | 2014-02-06 | 2014-02-21 | 34, 33 | 0d |  |  | 24h |
| 36 | 2.2.3.1 | Repair issues |  | 5d | 2014-02-06 | 2014-02-12 |  | 0d |  |  |  |
| 37 | 2.2.3.2 | Schedule open house for employees |  | 1d | 2014-02-13 | 2014-02-13 | 36 | 9d | 5d | Relo PM; Office manager | 16h |
| 38 | 2.2.3.3 | Clean new office |  | 1d | 2014-02-13 | 2014-02-13 | 36 | 0d |  | Cleaning service | 8h |
| 39 | 2.2.3.4 | Construction complete | milestone | 0d | 2014-02-13 | 2014-02-13 | 38 | 0d |  |  |  |
| 40 | 2.2.3.5 | Open house |  | 1d | 2014-02-21 | 2014-02-21 | 39FS+5d, 37 | 4d |  |  |  |
| 41 | 2.3 | **Set up services** |  | 10d | 2013-12-04 | 2013-12-17 | 16FS+2mo | 52d |  |  | 200h |
| 42 | 2.3.1 | Order change of address labels |  | 1d | 2013-12-04 | 2013-12-04 |  | 61d |  | Mailroom | 8h |
| 43 | 2.3.2 | Obtain estimates from signage companies |  | 7d | 2013-12-04 | 2013-12-12 |  | 52d | 0d | Office manager | 56h |
| 44 | 2.3.3 | Order signage |  | 3d | 2013-12-13 | 2013-12-17 | 43 | 52d |  | Office manager | 24h |
| 45 | 2.3.4 | Arrange external maintenance |  | 5d | 2013-12-04 | 2013-12-10 |  | 57d |  | Office manager | 40h |
| 46 | 2.3.5 | Arrange for trash disposal |  | 1d | 2013-12-04 | 2013-12-04 |  | 61d |  | Office manager | 8h |
| 47 | 2.3.6 | Arrange for cleaning service |  | 1d | 2013-12-04 | 2013-12-04 |  | 61d |  | Office manager | 8h |
| 48 | 2.3.7 | Arrange for recycling |  | 1d | 2013-12-04 | 2013-12-04 |  | 61d |  | Office manager | 8h |
| 49 | 2.3.8 | Order security system |  | 2d | 2013-12-04 | 2013-12-05 |  | 60d |  | Office manager | 16h |
| 50 | 2.3.9 | Send change of address to vendors, customers, supscriptions |  | 1d | 2013-12-04 | 2013-12-04 |  | 61d |  | Mailroom | 8h |
| 51 | 2.3.10 | Notify all leasers of equipment move |  | 1d | 2013-12-04 | 2013-12-04 |  | 61d |  | Office manager | 8h |
| 52 | 2.3.11 | Order checks with new address |  | 1d | 2013-12-04 | 2013-12-04 |  | 61d |  | Office manager | 8h |
| 53 | 2.3.12 | Schedule disconnection of utilities |  | 1d | 2013-12-04 | 2013-12-04 |  | 61d |  | Office manager | 8h |
| 54 | 2.4 | **Create office assignment layout** |  | 31d | 2013-10-09 | 2013-11-20 |  | 71d |  |  | 80h |
| 55 | 2.4.1 | Assign office spaces |  | 5d | 2013-11-13 | 2013-11-19 | 25 | 70d | 0d | Office manager | 40h |
| 56 | 2.4.2 | Assign new phone numbers, extensions |  | 2d | 2013-10-09 | 2013-10-10 |  | 98d | 0d | Telecom admin | 16h |
| 57 | 2.4.3 | Create new office extension directory |  | 1d | 2013-10-11 | 2013-10-11 | 56 | 98d | 0d | Telecommunications administrator | 8h |
| 58 | 2.4.4 | Create new office layout map |  | 1d | 2013-11-20 | 2013-11-20 | 55 | 70d | 0d | Office manager | 8h |
| 59 | 2.4.5 | Create new fax cover sheet |  | 1d | 2013-10-14 | 2013-10-14 | 57 | 98d |  | Office manager | 8h |
| 60 | 2.4.6 | Office plan complete | milestone | 0d | 2013-11-20 | 2013-11-20 | 58, 57 | 70d | 0d |  |  |

| ID | WBS | Task | Type | Duration | Start | Finish | Predecessors | Total slack | Free slack | Resources | Work |
| --- | --- | --- | --- | --- | --- | --- | --- | --- | --- | --- | --- |
| 61 | 2.5 | **Order new stationery** |  | 1d | 2013-11-21 | 2013-11-21 | 60 | 70d |  |  | 56h |
| 62 | 2.5.1 | Order new letterhead and envelopes |  | 1d | 2013-11-21 | 2013-11-21 |  | 70d |  | Office manager | 8h |
| 63 | 2.5.2 | Order new business cards |  | 1d | 2013-11-21 | 2013-11-21 |  | 70d |  | Office manager | 8h |
| 64 | 2.5.3 | Order new business forms |  | 1d | 2013-11-21 | 2013-11-21 |  | 70d |  | Office manager | 8h |
| 65 | 2.5.4 | Get shipping labels |  | 1d | 2013-11-21 | 2013-11-21 |  | 70d |  | Mailroom administrator | 8h |
| 66 | 2.5.5 | Create map to location |  | 1d | 2013-11-21 | 2013-11-21 |  | 70d |  | Office manager | 8h |
| 67 | 2.5.6 | Notify post office of change of address |  | 1d | 2013-11-21 | 2013-11-21 |  | 70d |  | Mailroom | 8h |
| 68 | 2.5.7 | Update company website with new information |  | 1d | 2013-11-21 | 2013-11-21 |  | 70d |  | Webmaster | 8h |
| 69 | 2.6 | **Hire movers** |  | 13d | 2013-11-06 | 2013-11-22 | 16FS+1mo | 69d |  |  | 104h |
| 70 | 2.6.1 | Obtain estimates from moving companies |  | 12d | 2013-11-06 | 2013-11-21 |  | 69d | 0d | Relo PM | 96h |
| 71 | 2.6.2 | Choose moving company |  | 1d | 2013-11-22 | 2013-11-22 | 70 | 69d |  | Relo PM | 8h |
| 72 | 2.7 | **Obtain insurance** |  | 10d | 2014-02-14 | 2014-02-27 | 39 | 0d |  |  | 112h |
| 73 | 2.7.1 | Appraise assets |  | 3d | 2014-02-14 | 2014-02-18 |  | 0d |  | Accounting mgr | 24h |
| 74 | 2.7.2 | Obtain quotes for insurance |  | 6d | 2014-02-19 | 2014-02-26 | 73 | 0d |  | Office manager | 48h |
| 75 | 2.7.3 | Purchase insurance |  | 1d | 2014-02-27 | 2014-02-27 | 74 | 0d |  | Office manager | 8h |
| 76 | 2.7.4 | **Pre-move tasks** |  | 4d | 2014-02-14 | 2014-02-19 |  | 6d |  |  | 32h |
| 77 | 2.7.4.1 | Install phone system |  | 4d | 2014-02-14 | 2014-02-19 | 22 | 6d |  | Telecom admin | 32h |
| 78 | 3 | Construction and prep complete | milestone | 0d | 2014-02-27 | 2014-02-27 | 17, 71, 75, 54 | 0d |  |  |  |
| 79 | 4 | **Move** |  | 9d | 2014-02-28 | 2014-03-12 | 78, 41 | 0d |  |  | 56h |
| 80 | 4.1 | Inventory office |  | 5d | 2014-02-28 | 2014-03-06 |  | 0d |  | Office manager | 40h |
| 81 | 4.2 | Distribute new keys, cards |  | 1d | 2014-02-28 | 2014-02-28 |  | 8d |  | Office manager | 8h |
| 82 | 4.3 | Collect old keys, cards |  | 1d | 2014-02-28 | 2014-02-28 |  | 4d |  | Office manager | 8h |
| 83 | 4.4 | Pack and move |  | 4d | 2014-03-07 | 2014-03-12 | 82, 80 | 0d |  |  |  |
| 84 | 4.5 | Move complete | milestone | 0d | 2014-03-12 | 2014-03-12 | 80, 81, 62, 63, 64, 67, 68, 53, 83 | 0d |  |  |  |

| ID | WBS | Task | Type | Duration | Start | Finish | Predecessors | Total slack | Resources | Work |
| --- | --- | --- | --- | --- | --- | --- | --- | --- | --- | --- |
| 85 | 5 | **Post-Move** |  | 9d | 2014-03-13 | 2014-03-25 | 84 | 0d |  | 104h |
| 86 | 5.1 | Check for damage and missing items |  | 9d | 2014-03-13 | 2014-03-25 |  | 0d | Office manager | 72h |
| 87 | 5.2 | Schedule phone training |  | 1d | 2014-03-13 | 2014-03-13 |  | 8d | Telecom admin | 8h |
| 88 | 5.3 | Schedule security training |  | 1d | 2014-03-13 | 2014-03-13 |  | 8d | Office manager | 8h |
| 89 | 5.4 | Schedule fire drill |  | 1d | 2014-03-13 | 2014-03-13 |  | 8d | Office manager | 8h |
| 90 | 5.5 | Schedule open house for clients |  | 1d | 2014-03-13 | 2014-03-13 |  | 8d | Relo PM | 8h |
| 91 | 5.6 | Office move complete | milestone | 0d | 2014-03-25 | 2014-03-25 | 84, 86, 87, 88, 89, 90 | 0d |  |  |
