# Office Move

Schedule from MS Project, 2014-06-03 to 2015-02-03.

## Calendars

- Standard: Mon-Fri 08:00-12:00, 13:00-17:00; Sat-Sun off.

## Resources

| Resource |
| --- |
| Relo PM |
| Office manager |
| Telecom admin |
| Network mgr |
| Mailroom |
| Accounting mgr |
| Local phone company |
| Cleaning service |
| Webmaster |
| Movers |
| Telecommunications administrator |
| Mailroom administrator |
| Architect |

## Schedule

| ID | WBS | Task | Type | Duration | Start | Finish | Predecessors | Total slack | Free slack | Resources | Work |
| --- | --- | --- | --- | --- | --- | --- | --- | --- | --- | --- | --- |
| 1 | 1 | **Planning Move** |  | 77.5d | 2014-06-03 | 2014-09-18 |  | 0d |  |  | 720h |
| 2 | 1.1 | **Document requirements** |  | 32.5d | 2014-06-03 | 2014-07-17 |  | 0d |  |  | 80h |
| 3 | 1.1.1 | Identify physical requirements |  | 30d | 2014-06-03 | 2014-07-14 |  | 0d |  |  |  |
| 4 | 1.1.2 | Draft the budget |  | 10d | 2014-07-03 | 2014-07-17 | 3FS-2.5% | 25d |  | Relo PM | 80h |
| 5 | 1.2 | **Choose new location** |  | 77.5d | 2014-06-03 | 2014-09-18 |  | 30d |  |  | 440h |
| 6 | 1.2.1 | **Evaluate build sites** |  | 0d | 2014-06-03 | 2014-06-03 |  | 175.5d |  |  |  |
| 7 | 1.2.1.1 | Identify potential build sites | inactive | 20d | 2014-06-03 | 2014-06-30 |  | 55.5d | 0d | Relo PM | 160h |
| 8 | 1.2.1.2 | Identify construction needs | inactive | 30d | 2014-07-01 | 2014-08-11 | 7 | 55.5d | 0d | Relo PM | 240h |
| 9 | 1.2.1.3 | Select site | inactive | 10d | 2014-08-12 | 2014-08-25 | 8 | 55.5d | 0d | Relo PM | 80h |
| 10 | 1.2.1.4 | Finalize purchase | inactive | 60d | 2014-08-26 | 2014-11-17 | 9 | 55.5d |  | Relo PM | 480h |
| 11 | 1.2.2 | **Evaluate lease sites** |  | 47.5d | 2014-07-15 | 2014-09-18 |  | 0d |  |  | 440h |
| 12 | 1.2.2.1 | Identify potential sites |  | 20d | 2014-07-15 | 2014-08-11 | 3 | 0d |  | Relo PM | 160h |
| 13 | 1.2.2.2 | Identify tenant improvements |  | 7.5d | 2014-08-12 | 2014-08-21 | 12 | 0d |  | Office manager; Relo PM | 120h |
| 14 | 1.2.2.3 | Select site |  | 10d | 2014-08-21 | 2014-09-04 | 13, 4 | 0d |  | Relo PM | 80h |
| 15 | 1.2.2.4 | Finalize lease |  | 10d | 2014-09-04 | 2014-09-18 | 14 | 0d |  | Relo PM | 80h |
| 16 | 1.3 | **Identify costs** |  | 20d | 2014-08-21 | 2014-09-18 |  | 0d |  |  | 160h |
| 17 | 1.3.1 | Obtain estimates for tenant improvements |  | 10d | 2014-08-21 | 2014-09-04 | 13 | 5d | 0d | Office manager | 80h |
| 18 | 1.3.2 | Identify additional costs (furniture, equipment) |  | 10d | 2014-09-04 | 2014-09-18 | 14 | 0d |  | Relo PM | 80h |
| 19 | 1.4 | Hire contractors for major tenant improvements |  | 5d | 2014-09-04 | 2014-09-11 | 17 | 5d |  | Relo PM | 40h |
| 20 | 1.5 | Planning complete | milestone | 0d | 2014-09-18 | 2014-09-18 | 12, 14, 15, 13, 18, 19 | 0d |  |  |  |
| 21 | 2 | **Construct and set up space** |  | 98d | 2014-09-18 | 2015-02-03 | 20 | 0d |  |  | 384h |
| 22 | 2.1 | **Prep phone system** |  | 5d | 2014-09-18 | 2014-09-25 | 20 | 93d |  |  | 40h |
| 23 | 2.1.1 | Review phone system requirements |  | 3d | 2014-09-18 | 2014-09-23 |  | 93d | 0d | Telecom admin | 24h |
| 24 | 2.1.2 | Order new phone numbers |  | 1d | 2014-09-23 | 2014-09-24 | 23 | 93d | 0d | Telecom admin | 8h |
| 25 | 2.1.3 | Order long-distance service |  | 1d | 2014-09-24 | 2014-09-25 | 24 | 93d | 0d | Telecom admin | 8h |
| 26 | 2.1.4 | Phone lines ordered | milestone | 0d | 2014-09-25 | 2014-09-25 | 25 | 93d |  |  |  |

| ID | WBS | Task | Type | Duration | Start | Finish | Predecessors | Total slack | Resources | Work |
| --- | --- | --- | --- | --- | --- | --- | --- | --- | --- | --- |
| 27 | 2.2 | **Design and construction** |  | 98d | 2014-09-18 | 2015-02-03 |  | 0d |  | 344h |
| 28 | 2.2.1 | **Design space** |  | 66d | 2014-09-18 | 2014-12-19 |  | 0d |  | 320h |
| 29 | 2.2.1.1 | Design office space |  | 25d | 2014-09-18 | 2014-10-23 | 20 | 0d | Office manager [50%]; Architect | 200h |
| 30 | 2.2.1.2 | Prepare drawings |  | 5d | 2014-10-23 | 2014-10-30 | 29 | 0d | Architect | 40h |
| 31 | 2.2.1.3 | Design IT infrastructure |  | 10d | 2014-10-30 | 2014-11-13 | 30 | 0d | Network mgr | 80h |
| 32 | 2.2.1.4 | Obtain final budget estimates |  | 10d | 2014-11-13 | 2014-11-27 | 31 | 0d |  |  |
| 33 | 2.2.1.5 | Sign off on plans |  | 1d | 2014-11-27 | 2014-11-28 | 32 | 0d |  |  |
| 34 | 2.2.1.6 | Obtain permits |  | 3w | 2014-11-28 | 2014-12-19 | 33 | 0d |  |  |
| 35 | 2.2.2 | **Construction** |  | 20d | 2014-12-19 | 2015-01-16 | 34 | 0d |  |  |
| 36 | 2.2.2.1 | Demolish walls |  | 5d | 2014-12-19 | 2014-12-26 |  | 0d |  |  |
| 37 | 2.2.2.2 | Construct new walls |  | 15d | 2014-12-26 | 2015-01-16 | 36 | 0d |  |  |
| 38 | 2.2.2.3 | Elec, mech, HVAC |  | 15d | 2014-12-26 | 2015-01-16 | 36 | 0d |  |  |
| 39 | 2.2.3 | **Walkthrough and repair** |  | 12d | 2015-01-16 | 2015-02-03 | 38, 37 | 0d |  | 24h |
| 40 | 2.2.3.1 | Repair issues |  | 5d | 2015-01-16 | 2015-01-23 |  | 0d |  |  |
| 41 | 2.2.3.2 | Schedule open house for employees |  | 1d | 2015-01-23 | 2015-01-26 | 40 | 5d | Relo PM; Office manager | 16h |
| 42 | 2.2.3.3 | Clean new office |  | 1d | 2015-01-23 | 2015-01-26 | 40 | 0d | Cleaning service | 8h |
| 43 | 2.2.3.4 | Construction complete | milestone | 0d | 2015-01-26 | 2015-01-26 | 42 | 0d |  |  |
| 44 | 2.2.3.5 | Open house |  | 1d | 2015-02-02 | 2015-02-03 | 43FS+5d, 41 | 0d |  |  |
