# Office Move

Schedule from MS Project, 2014-07-01 to 2015-01-05.

## Calendars

- Standard: Mon-Fri 08:00-12:00, 13:00-17:00; Sat-Sun off.

## Resources

| Resource |
| --- |
| Relo PM |
| Office manager |
| Telecom admin |
| Network mgr |
| Mailroom |
| Accounting mgr |
| Local phone company |
| Cleaning service |
| Webmaster |
| Movers |
| Telecommunications administrator |
| Mailroom administrator |
| Architect |

## Schedule

| ID | WBS | Task | Type | Duration | Start | Finish | Predecessors | Total slack | Free slack | Constraint | Resources | Work |
| --- | --- | --- | --- | --- | --- | --- | --- | --- | --- | --- | --- | --- |
| 1 | 1 | **Planning Move** |  | 50d | 2014-07-01 | 2014-09-08 |  | 0d |  |  |  | 760h |
| 2 | 1.1 | **Document requirements** |  | 40d | 2014-07-01 | 2014-08-25 |  | 0d |  |  |  | 120h |
| 3 | 1.1.1 | Identify requirements |  | 25d | 2014-07-01 | 2014-08-04 |  | 0d |  |  |  |  |
| 4 | 1.1.2 | Draft budget |  | 15d | 2014-08-05 | 2014-08-25 | 3 | 0d |  |  | Relo PM | 120h |
| 5 | 1.1.3 | Review requirements with management | milestone, manual | 0d | 2014-07-01 | 2014-07-01 |  |  |  |  |  |  |
| 6 | 1.2 | **Choose new location** |  | 50d | 2014-07-01 | 2014-09-08 |  | 0d |  |  |  | 520h |
| 7 | 1.2.1 | **Evaluate lease sites** |  | 50d | 2014-07-01 | 2014-09-08 |  | 0d |  |  |  | 520h |
| 8 | 1.2.1.1 | Identify potential sites | manual | 20d | 2014-07-01 | 2014-07-28 | 3 |  |  | start no earlier than 2014-07-01 | Relo PM | 160h |
| 9 | 1.2.1.2 | Identify tenant improvements |  | 7.5d | 2014-07-01 | 2014-07-10 |  | 42.5d |  |  | Office manager; Relo PM | 120h |
| 10 | 1.2.1.3 | Obtain estimates for tenant improvements |  | 10d | 2014-07-01 | 2014-07-14 |  | 35d | 0d |  | Office manager | 80h |
| 11 | 1.2.1.4 | Select site |  | 10d | 2014-08-26 | 2014-09-08 | 4 | 0d |  |  | Relo PM | 80h |
| 12 | 1.2.1.5 | Finalize lease |  | 10d | 2014-07-01 | 2014-07-14 |  | 40d |  |  | Relo PM | 80h |
| 13 | 1.3 | **Identify costs** |  | 10d | 2014-07-01 | 2014-07-14 |  | 40d |  |  |  | 80h |
| 14 | 1.3.1 | Identify additional costs (furniture, equipment) |  | 10d | 2014-07-01 | 2014-07-14 |  | 40d |  |  | Relo PM | 80h |
| 15 | 1.4 | Hire contractors for major tenant improvements |  | 5d | 2014-07-15 | 2014-07-21 | 10 | 35d |  |  | Relo PM | 40h |
| 16 | 1.5 | Planning complete | milestone | 0d | 2014-09-08 | 2014-09-08 | 8, 11, 12, 9, 14, 15 | 0d |  |  |  |  |
| 17 | 2 | **Construct and set up space** |  | 67d? | 2014-09-09 | 2014-12-10 | 16 | 0d |  |  |  | 936h |
| 18 | 2.1 | **Prep phone system** |  | 5d | 2014-09-09 | 2014-09-15 | 16 | 58d |  |  |  | 40h |
| 19 | 2.1.1 | Review phone system requirements |  | 3d | 2014-09-09 | 2014-09-11 |  | 58d | 0d |  | Telecom admin | 24h |
| 20 | 2.1.2 | Order new phone numbers |  | 1d | 2014-09-12 | 2014-09-12 | 19 | 58d | 0d |  | Telecom admin | 8h |
| 21 | 2.1.3 | Order long-distance service |  | 1d | 2014-09-15 | 2014-09-15 | 20 | 58d | 0d |  | Telecom admin | 8h |
| 22 | 2.1.4 | Phone lines ordered | milestone | 0d | 2014-09-15 | 2014-09-15 | 21 | 58d | 1d |  |  |  |
| 23 | 2.2 | **Design and construction** |  | 67d? | 2014-09-09 | 2014-12-10 |  | 0d |  |  |  | 344h |
| 24 | 2.2.1 | **Design space** |  | 66d | 2014-09-09 | 2014-12-09 |  | 0d |  |  |  | 320h |
| 25 | 2.2.1.1 | Design office space |  | 25d | 2014-09-09 | 2014-10-13 | 16 | 0d |  |  | Office manager [50%]; Architect | 200h |
| 26 | 2.2.1.2 | Prepare drawings |  | 5d | 2014-10-14 | 2014-10-20 | 25 | 0d |  |  | Architect | 40h |
| 27 | 2.2.1.3 | Design IT infrastructure |  | 10d | 2014-10-21 | 2014-11-03 | 26 | 0d |  |  | Network mgr | 80h |
| 28 | 2.2.1.4 | Obtain final budget estimates |  | 10d | 2014-11-04 | 2014-11-17 | 27 | 0d |  |  |  |  |
| 29 | 2.2.1.5 | Sign off on plans |  | 1d | 2014-11-18 | 2014-11-18 | 28 | 0d |  |  |  |  |
| 30 | 2.2.1.6 | Obtain permits |  | 3w | 2014-11-19 | 2014-12-09 | 29 | 0d |  |  |  |  |
| 31 | 2.2.2 | Construction |  | 1d? | 2014-12-10 | 2014-12-10 | 30 | 0d |  |  |  |  |
| 32 | 2.2.3 | Demolish walls |  | 5d | 2014-09-09 | 2014-09-15 |  | 47d | 0d |  |  |  |
| 33 | 2.2.4 | Construct new walls |  | 15d | 2014-09-16 | 2014-10-06 | 32 | 47d |  |  |  |  |
| 34 | 2.2.5 | Elec, mech, HVAC |  | 15d | 2014-09-16 | 2014-10-06 | 32 | 47d |  |  |  |  |
| 35 | 2.2.6 | Repair issues |  | 5d | 2014-09-09 | 2014-09-15 |  | 51d | 0d |  |  |  |
| 36 | 2.2.7 | Schedule open house for employees |  | 1d | 2014-09-16 | 2014-09-16 | 35 | 61d |  |  | Relo PM; Office manager | 16h |
| 37 | 2.2.8 | Clean new office |  | 1d | 2014-09-16 | 2014-09-16 | 35 | 51d | 0d |  | Cleaning service | 8h |
| 38 | 2.2.9 | Construction complete | milestone | 0d | 2014-09-16 | 2014-09-16 | 37 | 51d | 0d |  |  |  |

| ID | WBS | Task | Type | Duration | Start | Finish | Predecessors | Total slack | Free slack | Resources | Work |
| --- | --- | --- | --- | --- | --- | --- | --- | --- | --- | --- | --- |
| 39 | 2.3 | **Set up services** |  | 10d | 2014-11-04 | 2014-11-17 | 16FS+2mo | 17d |  |  | 200h |
| 40 | 2.3.1 | Order change of address labels |  | 1d | 2014-11-04 | 2014-11-04 |  | 26d |  | Mailroom | 8h |
| 41 | 2.3.2 | Obtain estimates from signage companies |  | 7d | 2014-11-04 | 2014-11-12 |  | 17d | 0d | Office manager | 56h |
| 42 | 2.3.3 | Order signage |  | 3d | 2014-11-13 | 2014-11-17 | 41 | 17d |  | Office manager | 24h |
| 43 | 2.3.4 | Arrange external maintenance |  | 5d | 2014-11-04 | 2014-11-10 |  | 22d |  | Office manager | 40h |
| 44 | 2.3.5 | Arrange for trash disposal |  | 1d | 2014-11-04 | 2014-11-04 |  | 26d |  | Office manager | 8h |
| 45 | 2.3.6 | Arrange for cleaning service |  | 1d | 2014-11-04 | 2014-11-04 |  | 26d |  | Office manager | 8h |
| 46 | 2.3.7 | Arrange for recycling |  | 1d | 2014-11-04 | 2014-11-04 |  | 26d |  | Office manager | 8h |
| 47 | 2.3.8 | Order security system |  | 2d | 2014-11-04 | 2014-11-05 |  | 25d |  | Office manager | 16h |
| 48 | 2.3.9 | Send change of address to vendors, customers, supscriptions |  | 1d | 2014-11-04 | 2014-11-04 |  | 26d |  | Mailroom | 8h |
| 49 | 2.3.10 | Notify all leasers of equipment move |  | 1d | 2014-11-04 | 2014-11-04 |  | 26d |  | Office manager | 8h |
| 50 | 2.3.11 | Order checks with new address |  | 1d | 2014-11-04 | 2014-11-04 |  | 26d |  | Office manager | 8h |
| 51 | 2.3.12 | Schedule disconnection of utilities |  | 1d | 2014-11-04 | 2014-11-04 |  | 26d |  | Office manager | 8h |
| 52 | 2.4 | **Create office assignment layout** |  | 31d | 2014-09-09 | 2014-10-21 |  | 36d |  |  | 80h |
| 53 | 2.4.1 | Assign office spaces |  | 5d | 2014-10-14 | 2014-10-20 | 25 | 35d | 0d | Office manager | 40h |
| 54 | 2.4.2 | Assign new phone numbers, extensions |  | 2d | 2014-09-09 | 2014-09-10 |  | 63d | 0d | Telecom admin | 16h |
| 55 | 2.4.3 | Create new office extension directory |  | 1d | 2014-09-11 | 2014-09-11 | 54 | 63d | 0d | Telecommunications administrator | 8h |
| 56 | 2.4.4 | Create new office layout map |  | 1d | 2014-10-21 | 2014-10-21 | 53 | 35d | 0d | Office manager | 8h |
| 57 | 2.4.5 | Create new fax cover sheet |  | 1d | 2014-09-12 | 2014-09-12 | 55 | 63d |  | Office manager | 8h |
| 58 | 2.4.6 | Office plan complete | milestone | 0d | 2014-10-21 | 2014-10-21 | 56, 55 | 35d | 0d |  |  |
| 59 | 2.5 | **Order new stationery** |  | 1d | 2014-10-22 | 2014-10-22 | 58 | 35d |  |  | 56h |
| 60 | 2.5.1 | Order new letterhead and envelopes |  | 1d | 2014-10-22 | 2014-10-22 |  | 35d |  | Office manager | 8h |
| 61 | 2.5.2 | Order new business cards |  | 1d | 2014-10-22 | 2014-10-22 |  | 35d |  | Office manager | 8h |
| 62 | 2.5.3 | Order new business forms |  | 1d | 2014-10-22 | 2014-10-22 |  | 35d |  | Office manager | 8h |
| 63 | 2.5.4 | Get shipping labels |  | 1d | 2014-10-22 | 2014-10-22 |  | 35d |  | Mailroom administrator | 8h |
| 64 | 2.5.5 | Create map to location |  | 1d | 2014-10-22 | 2014-10-22 |  | 35d |  | Office manager | 8h |
| 65 | 2.5.6 | Notify post office of change of address |  | 1d | 2014-10-22 | 2014-10-22 |  | 35d |  | Mailroom | 8h |
| 66 | 2.5.7 | Update company website with new information |  | 1d | 2014-10-22 | 2014-10-22 |  | 35d |  | Webmaster | 8h |

| ID | WBS | Task | Type | Duration | Start | Finish | Predecessors | Total slack | Free slack | Resources | Work |
| --- | --- | --- | --- | --- | --- | --- | --- | --- | --- | --- | --- |
| 67 | 2.6 | **Hire movers** |  | 13d | 2014-10-07 | 2014-10-23 | 16FS+1mo | 34d |  |  | 104h |
| 68 | 2.6.1 | Obtain estimates from moving companies |  | 12d | 2014-10-07 | 2014-10-22 |  | 34d | 0d | Relo PM | 96h |
| 69 | 2.6.2 | Choose moving company |  | 1d | 2014-10-23 | 2014-10-23 | 68 | 34d |  | Relo PM | 8h |
| 70 | 2.7 | **Obtain insurance** |  | 10d | 2014-09-17 | 2014-09-30 | 38 | 51d |  |  | 112h |
| 71 | 2.7.1 | Appraise assets |  | 3d | 2014-09-17 | 2014-09-19 |  | 51d | 0d | Accounting mgr | 24h |
| 72 | 2.7.2 | Obtain quotes for insurance |  | 6d | 2014-09-22 | 2014-09-29 | 71 | 51d | 0d | Office manager | 48h |
| 73 | 2.7.3 | Purchase insurance |  | 1d | 2014-09-30 | 2014-09-30 | 72 | 51d |  | Office manager | 8h |
| 74 | 2.7.4 | **Pre-move tasks** |  | 4d | 2014-09-17 | 2014-09-22 |  | 57d |  |  | 32h |
| 75 | 2.7.4.1 | Install phone system |  | 4d | 2014-09-17 | 2014-09-22 | 22 | 57d |  | Telecom admin | 32h |
| 76 | 3 | Construction and prep complete | milestone | 0d | 2014-12-10 | 2014-12-10 | 17, 69, 73, 52 | 0d |  |  |  |
| 77 | 4 | **Move** |  | 9d | 2014-12-11 | 2014-12-23 | 76, 39 | 0d |  |  | 56h |
| 78 | 4.1 | Inventory office |  | 5d | 2014-12-11 | 2014-12-17 |  | 0d |  | Office manager | 40h |
| 79 | 4.2 | Distribute new keys, cards |  | 1d | 2014-12-11 | 2014-12-11 |  | 8d |  | Office manager | 8h |
| 80 | 4.3 | Collect old keys, cards |  | 1d | 2014-12-11 | 2014-12-11 |  | 4d |  | Office manager | 8h |
| 81 | 4.4 | Pack and move |  | 4d | 2014-12-18 | 2014-12-23 | 80, 78 | 0d |  |  |  |
| 82 | 4.5 | Move complete | milestone | 0d | 2014-12-23 | 2014-12-23 | 78, 79, 60, 61, 62, 65, 66, 51, 81 | 0d |  |  |  |
| 83 | 5 | **Post-Move** |  | 9d | 2014-12-24 | 2015-01-05 | 82 | 0d |  |  | 104h |
| 84 | 5.1 | Check for damage and missing items |  | 9d | 2014-12-24 | 2015-01-05 |  | 0d |  | Office manager | 72h |
| 85 | 5.2 | Schedule phone training |  | 1d | 2014-12-24 | 2014-12-24 |  | 8d |  | Telecom admin | 8h |
| 86 | 5.3 | Schedule security training |  | 1d | 2014-12-24 | 2014-12-24 |  | 8d |  | Office manager | 8h |
| 87 | 5.4 | Schedule fire drill |  | 1d | 2014-12-24 | 2014-12-24 |  | 8d |  | Office manager | 8h |
| 88 | 5.5 | Schedule open house for clients |  | 1d | 2014-12-24 | 2014-12-24 |  | 8d |  | Relo PM | 8h |
| 89 | 5.6 | Office move complete | milestone | 0d | 2015-01-05 | 2015-01-05 | 82, 84, 85, 86, 87, 88 | 0d |  |  |  |
