# Office Move

Schedule from MS Project, 2014-07-01 to 2015-09-16, costs in $.

## Calendars

- Standard: Mon-Fri 08:00-12:00, 13:00-17:00; Sat-Sun off.

## Resources

| Resource | Group | Unit | Rate | Cost per use |
| --- | --- | --- | --- | --- |
| Relo PM |  |  | 80 |  |
| Office manager |  |  | 80 |  |
| Telecom admin | IT |  | 90 |  |
| Mailroom |  |  | 50 |  |
| Accounting mgr |  |  | 90 |  |
| Local phone company | Vendor |  |  |  |
| Cleaning service | Vendor |  | 50 |  |
| Webmaster | IT |  | 70 |  |
| Movers | Vendor |  | 200 |  |
| Architect |  |  | 100 |  |
| Dumpster |  |  | 0.94 | 450 |
| Box |  | Piece | 3 |  |
| Bubble wrap |  | Roll | 12 |  |
| Paper |  | Ream | 5 |  |
| Storage space |  |  | 1.88 |  |
| Lodging |  |  |  |  |
| Airfare |  |  |  |  |
| Permit |  |  |  |  |
| IT Manager | IT |  | 90 |  |

## Schedule

| ID | WBS | Task | Type | Duration | Start | Finish | Predecessors | Total slack | Free slack | Resources | Work | Cost |
| --- | --- | --- | --- | --- | --- | --- | --- | --- | --- | --- | --- | --- |
| 1 | 1 | **Planning Move** |  | 50d | 2014-07-01 | 2014-09-08 |  | 0d |  |  | 760h | 60,800 |
| 2 | 1.1 | **Document requirements** |  | 40d | 2014-07-01 | 2014-08-25 |  | 0d |  |  | 120h | 9,600 |
| 3 | 1.1.1 | Identify requirements |  | 25d | 2014-07-01 | 2014-08-04 |  | 0d |  |  |  |  |
| 4 | 1.1.2 | Draft budget |  | 15d | 2014-08-05 | 2014-08-25 | 3 | 0d |  | Relo PM | 120h | 9,600 |
| 5 | 1.1.3 | Review requirements with management |  | 1d | 2014-07-01 | 2014-07-01 |  | 315.25d |  |  |  |  |
| 6 | 1.2 | **Choose new location** |  | 50d | 2014-07-01 | 2014-09-08 |  | 0d |  |  | 520h | 41,600 |
| 7 | 1.2.1 | **Evaluate lease sites** |  | 50d | 2014-07-01 | 2014-09-08 |  | 0d |  |  | 520h | 41,600 |
| 8 | 1.2.1.1 | Identify potential sites |  | 20d | 2014-08-05 | 2014-09-01 | 3 | 5d |  | Relo PM | 160h | 12,800 |
| 9 | 1.2.1.2 | Identify tenant improvements |  | 13d | 2014-07-01 | 2014-08-11 |  | 20d |  | Office manager; Relo PM | 120h | 9,600 |
| 10 | 1.2.1.3 | Obtain estimates for tenant improvements |  | 10d | 2014-07-01 | 2014-08-25 |  | 5d | 0d | Office manager | 80h | 6,400 |
| 11 | 1.2.1.4 | Select site |  | 10d | 2014-08-26 | 2014-09-08 | 4 | 0d |  | Relo PM | 80h | 6,400 |
| 12 | 1.2.1.5 | Finalize lease |  | 10d | 2014-07-01 | 2014-07-14 |  | 40d |  | Relo PM | 80h | 6,400 |
| 13 | 1.3 | **Identify costs** |  | 10d | 2014-07-01 | 2014-07-14 |  | 40d |  |  | 80h | 6,400 |
| 14 | 1.3.1 | Identify additional costs (furniture, equipment) |  | 10d | 2014-07-01 | 2014-07-14 |  | 40d |  | Relo PM | 80h | 6,400 |
| 15 | 1.4 | Hire contractors for major tenant improvements |  | 5d | 2014-08-25 | 2014-09-01 | 10 | 5.75d |  | Relo PM | 40h | 3,200 |
| 16 | 1.5 | Planning complete | milestone | 0d | 2014-09-08 | 2014-09-08 | 8, 11, 12, 9, 14, 15 | 0d |  |  |  |  |
| 17 | 2 | **Construct and set up space** |  | 206.25d | 2014-09-09 | 2015-06-24 | 16 | 0d |  |  | 840h | 70,080 |
| 18 | 2.1 | **Prep phone system** |  | 19.25d | 2014-09-09 | 2014-10-06 | 16 | 171d |  |  | 40h | 3,600 |
| 19 | 2.1.1 | Review phone system requirements |  | 3d | 2014-09-09 | 2014-09-24 |  | 171d | 0.75d | Telecom admin | 24h | 2,160 |
| 20 | 2.1.2 | Order new phone numbers |  | 1d | 2014-09-25 | 2014-09-30 | 19 | 171d | 0.75d | Telecom admin | 8h | 720 |
| 21 | 2.1.3 | Order long-distance service |  | 1d | 2014-10-01 | 2014-10-06 | 20 | 171d | 0d | Telecom admin | 8h | 720 |
| 22 | 2.1.4 | Phone lines ordered | milestone | 0d | 2014-10-06 | 2014-10-06 | 21 | 171.75d | 147.75d |  |  |  |
| 23 | 2.2 | **Design and construction** |  | 172.25d | 2014-09-09 | 2015-05-07 |  | 0d |  |  | 264h | 23,680 |
| 24 | 2.2.1 | **Design space** |  | 140.25d | 2014-09-09 | 2015-03-24 |  | 0d |  |  | 240h | 22,000 |
| 25 | 2.2.1.1 | Design office space |  | 34.25d | 2014-09-09 | 2015-01-26 | 16 | 0d |  | Office manager [50%]; Architect | 200h | 18,000 |
| 26 | 2.2.1.2 | Prepare drawings |  | 5d | 2015-01-26 | 2015-02-02 | 25 | 0.75d | 0d | Architect | 40h | 4,000 |
| 27 | 2.2.1.3 | Design IT infrastructure |  | 10d | 2015-02-02 | 2015-02-16 | 26 | 0.75d | 0d |  |  |  |
| 28 | 2.2.1.4 | Obtain final budget estimates |  | 10d | 2015-02-16 | 2015-03-02 | 27 | 0.75d | 0d |  |  |  |
| 29 | 2.2.1.5 | Sign off on plans |  | 1d | 2015-03-02 | 2015-03-03 | 28 | 0.75d | 0d |  |  |  |
| 30 | 2.2.1.6 | Obtain permits |  | 3w | 2015-03-03 | 2015-03-24 | 29 | 0.75d | 0d |  |  |  |

| ID | WBS | Task | Type | Duration | Start | Finish | Predecessors | Total slack | Free slack | Resources | Work | Cost |
| --- | --- | --- | --- | --- | --- | --- | --- | --- | --- | --- | --- | --- |
| 31 | 2.2.2 | **Construction** |  | 20d | 2015-03-24 | 2015-04-21 | 30 | 0.75d |  |  |  |  |
| 32 | 2.2.2.1 | Demolish walls |  | 5d | 2015-03-24 | 2015-03-31 |  | 0.75d | 0d |  |  |  |
| 33 | 2.2.2.2 | Construct new walls |  | 15d | 2015-03-31 | 2015-04-21 | 32 | 0.75d | 0d |  |  |  |
| 34 | 2.2.2.3 | Elec, mech, HVAC |  | 15d | 2015-03-31 | 2015-04-21 | 32 | 0.75d | 0d |  |  |  |
| 35 | 2.2.3 | **Walkthrough and repair** |  | 12d | 2015-04-21 | 2015-05-07 | 34, 33 | 0.75d |  |  | 24h | 1,680 |
| 36 | 2.2.3.1 | Repair issues |  | 5d | 2015-04-21 | 2015-04-28 |  | 0.75d | 0d |  |  |  |
| 37 | 2.2.3.2 | Schedule open house for employees |  | 1.75d | 2015-04-28 | 2015-05-04 | 36 | 36.75d | 2d | Relo PM; Office manager | 16h | 1,280 |
| 38 | 2.2.3.3 | Clean new office |  | 1d | 2015-04-28 | 2015-04-29 | 36 | 0.75d | 0d | Cleaning service | 8h | 400 |
| 39 | 2.2.3.4 | Construction complete | milestone | 0d | 2015-04-29 | 2015-04-29 | 38 | 0.75d | 0d |  |  |  |
| 40 | 2.2.3.5 | Open house |  | 1d | 2015-05-06 | 2015-05-07 | 39FS+5d, 37 | 34.75d |  |  |  |  |
| 41 | 2.3 | **Set up services** |  | 39.25d | 2014-11-04 | 2014-12-29 | 16FS+2mo | 127d |  |  | 200h | 15,520 |
| 42 | 2.3.1 | Order change of address labels |  | 1d | 2014-11-04 | 2014-11-07 |  | 163d |  | Mailroom | 8h | 400 |
| 43 | 2.3.2 | Obtain estimates from signage companies |  | 7d | 2014-11-04 | 2014-12-11 |  | 127d | 0.75d | Office manager | 56h | 4,480 |
| 44 | 2.3.3 | Order signage |  | 3d | 2014-12-12 | 2014-12-29 | 43 | 127d |  | Office manager | 24h | 1,920 |
| 45 | 2.3.4 | Arrange external maintenance |  | 5d | 2014-11-04 | 2014-12-01 |  | 147d |  | Office manager | 40h | 3,200 |
| 46 | 2.3.5 | Arrange for trash disposal |  | 1d | 2014-11-04 | 2014-11-07 |  | 163d |  | Office manager | 8h | 640 |
| 47 | 2.3.6 | Arrange for cleaning service |  | 1d | 2014-11-04 | 2014-11-07 |  | 163d |  | Office manager | 8h | 640 |
| 48 | 2.3.7 | Arrange for recycling |  | 1d | 2014-11-04 | 2014-11-07 |  | 163d |  | Office manager | 8h | 640 |
| 49 | 2.3.8 | Order security system |  | 2d | 2014-11-04 | 2014-11-13 |  | 159d |  | Office manager | 16h | 1,280 |
| 50 | 2.3.9 | Send change of address to vendors, customers, supscriptions |  | 1d | 2014-11-04 | 2014-11-07 |  | 163d |  | Mailroom | 8h | 400 |
| 51 | 2.3.10 | Notify all leasers of equipment move |  | 1d | 2014-11-04 | 2014-11-07 |  | 163d |  | Office manager | 8h | 640 |
| 52 | 2.3.11 | Order checks with new address |  | 1d | 2014-11-04 | 2014-11-07 |  | 163d |  | Office manager | 8h | 640 |
| 53 | 2.3.12 | Schedule disconnection of utilities |  | 1d | 2014-11-04 | 2014-11-07 |  | 163d |  | Office manager | 8h | 640 |
| 54 | 2.4 | **Create office assignment layout** |  | 123.25d | 2014-09-09 | 2015-02-27 |  | 83d |  |  | 72h | 5,920 |
| 55 | 2.4.1 | Assign office spaces |  | 5d | 2015-01-27 | 2015-02-23 | 25 | 79d | 0.75d | Office manager | 40h | 3,200 |
| 56 | 2.4.2 | Assign new phone numbers, extensions |  | 2d | 2014-09-09 | 2014-09-18 |  | 194d | 0d | Telecom admin | 16h | 1,440 |
| 57 | 2.4.3 | Create new office extension directory |  | 1d | 2014-09-18 | 2014-09-19 | 56 | 194.75d | 0.75d |  |  |  |
| 58 | 2.4.4 | Create new office layout map |  | 1d | 2015-02-24 | 2015-02-27 | 55 | 79d | 0d | Office manager | 8h | 640 |
| 59 | 2.4.5 | Create new fax cover sheet |  | 1d | 2014-09-22 | 2014-09-25 | 57 | 194d |  | Office manager | 8h | 640 |
| 60 | 2.4.6 | Office plan complete | milestone | 0d | 2015-02-27 | 2015-02-27 | 58, 57 | 79.75d | 0d |  |  |  |

| ID | WBS | Task | Type | Duration | Start | Finish | Predecessors | Total slack | Free slack | Resources | Work | Cost |
| --- | --- | --- | --- | --- | --- | --- | --- | --- | --- | --- | --- | --- |
| 61 | 2.5 | **Order new stationery** |  | 4d | 2015-02-27 | 2015-03-05 | 60 | 79.75d |  |  | 48h | 3,520 |
| 62 | 2.5.1 | Order new letterhead and envelopes |  | 1d | 2015-03-02 | 2015-03-05 |  | 79d |  | Office manager | 8h | 640 |
| 63 | 2.5.2 | Order new business cards |  | 1d | 2015-03-02 | 2015-03-05 |  | 79d |  | Office manager | 8h | 640 |
| 64 | 2.5.3 | Order new business forms |  | 1d | 2015-03-02 | 2015-03-05 |  | 79d |  | Office manager | 8h | 640 |
| 65 | 2.5.4 | Get shipping labels |  | 1d | 2015-02-27 | 2015-03-02 |  | 82.75d |  |  |  |  |
| 66 | 2.5.5 | Create map to location |  | 1d | 2015-03-02 | 2015-03-05 |  | 79d |  | Office manager | 8h | 640 |
| 67 | 2.5.6 | Notify post office of change of address |  | 1d | 2015-03-02 | 2015-03-05 |  | 79d |  | Mailroom | 8h | 400 |
| 68 | 2.5.7 | Update company website with new information |  | 1d | 2015-03-02 | 2015-03-05 |  | 79d |  | Webmaster | 8h | 560 |
| 69 | 2.6 | **Hire movers** |  | 13d | 2014-10-07 | 2014-10-23 | 16FS+1mo | 174d |  |  | 104h | 8,320 |
| 70 | 2.6.1 | Obtain estimates from moving companies |  | 12d | 2014-10-07 | 2014-10-22 |  | 174d | 0d | Relo PM | 96h | 7,680 |
| 71 | 2.6.2 | Choose moving company |  | 1d | 2014-10-23 | 2014-10-23 | 70 | 174d | 173.25d | Relo PM | 8h | 640 |
| 72 | 2.7 | **Obtain insurance** |  | 39.25d | 2015-04-30 | 2015-06-24 | 39 | 0d |  |  | 112h | 9,520 |
| 73 | 2.7.1 | Appraise assets |  | 3d | 2015-04-30 | 2015-05-15 |  | 0d |  | Accounting mgr | 24h | 2,160 |
| 74 | 2.7.2 | Obtain quotes for insurance |  | 6d | 2015-05-18 | 2015-06-18 | 73 | 0d |  | Office manager | 48h | 3,840 |
| 75 | 2.7.3 | Purchase insurance |  | 1d | 2015-06-19 | 2015-06-24 | 74 | 0d |  | Office manager | 8h | 640 |
| 76 | 2.7.4 | **Pre-move tasks** |  | 15.25d | 2015-04-30 | 2015-05-21 |  | 24d |  |  | 32h | 2,880 |
| 77 | 2.7.4.1 | Install phone system |  | 4d | 2015-04-30 | 2015-05-21 | 22 | 24d |  | Telecom admin | 32h | 2,880 |
| 78 | 3 | Construction and prep complete | milestone | 0d | 2015-06-24 | 2015-06-24 | 17, 71, 75, 54 | 0.75d |  |  |  |  |
| 79 | 4 | **Move** |  | 23.25d | 2015-06-25 | 2015-07-28 | 78, 41 | 0d |  |  | 56h | 4,480 |
| 80 | 4.1 | Inventory office |  | 5d | 2015-06-25 | 2015-07-22 |  | 0d |  | Office manager | 40h | 3,200 |
| 81 | 4.2 | Distribute new keys, cards |  | 1d | 2015-06-25 | 2015-06-30 |  | 20d |  | Office manager | 8h | 640 |
| 82 | 4.3 | Collect old keys, cards |  | 1d | 2015-06-25 | 2015-06-30 |  | 16d |  | Office manager | 8h | 640 |
| 83 | 4.4 | Pack and move |  | 4d | 2015-07-22 | 2015-07-28 | 82, 80 | 0.75d | 0d |  |  |  |
| 84 | 4.5 | Move complete | milestone | 0d | 2015-07-28 | 2015-07-28 | 80, 81, 62, 63, 64, 67, 68, 53, 83 | 0.75d | 0d |  |  |  |

| ID | WBS | Task | Type | Duration | Start | Finish | Predecessors | Total slack | Resources | Work | Cost |
| --- | --- | --- | --- | --- | --- | --- | --- | --- | --- | --- | --- |
| 85 | 5 | **Post-Move** |  | 36d | 2015-07-28 | 2015-09-16 | 84 | 0d |  | 104h | 8,400 |
| 86 | 5.1 | Check for damage and missing items |  | 9d | 2015-07-29 | 2015-09-16 |  | 0d | Office manager | 72h | 5,760 |
| 87 | 5.2 | Schedule phone training |  | 1d | 2015-07-29 | 2015-08-03 |  | 32d | Telecom admin | 8h | 720 |
| 88 | 5.3 | Schedule security training |  | 1d | 2015-07-29 | 2015-08-03 |  | 32d | Office manager | 8h | 640 |
| 89 | 5.4 | Schedule fire drill |  | 1d | 2015-07-29 | 2015-08-03 |  | 32d | Office manager | 8h | 640 |
| 90 | 5.5 | Schedule open house for clients |  | 1d | 2015-07-28 | 2015-07-29 |  | 35d | Relo PM | 8h | 640 |
| 91 | 5.6 | Office move complete | milestone | 0d | 2015-09-16 | 2015-09-16 | 84, 86, 87, 88, 89, 90 | 0d |  |  |  |
