# Office Move

Schedule from MS Project, 2014-01-07 to 2014-10-23.

## Calendars

- Standard: Mon-Fri 08:00-12:00, 13:00-17:00; Sat-Sun off.

## Resources

| Resource | Group | Unit | Rate |
| --- | --- | --- | --- |
| Relo PM | Mgt |  | 90 |
| Office manager | IT |  | 80 |
| Telecom admin | IT |  | 70 |
| Network mgr | IT |  | 90 |
| Mailroom |  |  |  |
| Accounting mgr | Acct |  | 90 |
| Local phone company |  |  |  |
| Cleaning service |  |  |  |
| Webmaster | IT |  | 60 |
| Movers |  |  |  |
| Architect |  |  | 100 |
| Network tech | IT |  | 60 |
| Network admin | IT |  | 70 |
| Bookkeeper | Acct |  | 50 |
| Billing supervisor | Acct |  | 60 |
| Sys admin | IT |  | 70 |
| System architect | IT |  |  |
| Stationery |  | Packet | 2 |
| Sign |  | SIgn | 50 |
| Printer Cartridges |  | Catridge | 59 |
| Cider |  | Case | 55 |
| Lodging |  |  |  |
| Mileage |  |  |  |
| Airfare |  |  |  |
| Relo Asst | Mgt |  | 60 |

## Schedule

| ID | WBS | Task | Type | Duration | Start | Finish | Predecessors | Total slack | Free slack |
| --- | --- | --- | --- | --- | --- | --- | --- | --- | --- |
| 1 | 1 | **Planning Move** |  | 87.5d | 2014-01-07 | 2014-05-08 |  | 0d |  |
| 2 | 1.1 | **Document requirements** |  | 40d | 2014-01-07 | 2014-03-03 |  | 0d |  |
| 3 | 1.1.1 | Identify physical requirements |  | 40d | 2014-01-07 | 2014-03-03 |  | 0d |  |
| 4 | 1.1.2 | Draft the budget |  | 10d | 2014-02-18 | 2014-03-03 | 3FS-2.5% | 27.5d |  |
| 5 | 1.2 | **Choose new location** |  | 87.5d | 2014-01-07 | 2014-05-08 |  | 40d |  |
| 6 | 1.2.1 | Evaluate build sites |  | 3d | 2014-01-07 | 2014-01-09 |  | 205d |  |
| 7 | 1.2.2 | **Evaluate lease sites** |  | 47.5d | 2014-03-04 | 2014-05-08 |  | 0d |  |
| 8 | 1.2.2.1 | Identify potential sites |  | 20d | 2014-03-04 | 2014-03-31 | 3 | 0d |  |
| 9 | 1.2.2.2 | Identify tenant improvements |  | 7.5d | 2014-04-01 | 2014-04-10 | 8 | 0d |  |
| 10 | 1.2.2.3 | Select site |  | 10d | 2014-04-10 | 2014-04-24 | 9, 4 | 0d |  |
| 11 | 1.2.2.4 | Finalize lease |  | 10d | 2014-04-24 | 2014-05-08 | 10 | 0d |  |
| 12 | 1.3 | **Identify costs** |  | 20d | 2014-04-10 | 2014-05-08 |  | 0d |  |
| 13 | 1.3.1 | Obtain estimates for tenant improvements |  | 10d | 2014-04-10 | 2014-04-24 | 9 | 5d | 0d |
| 14 | 1.3.2 | Identify additional costs (furniture, equipment) |  | 10d | 2014-04-24 | 2014-05-08 | 10 | 0d |  |
| 15 | 1.4 | Hire contractors for major tenant improvements |  | 5d | 2014-04-24 | 2014-05-01 | 13 | 5d |  |
| 16 | 1.5 | Planning complete | milestone | 0d | 2014-05-08 | 2014-05-08 | 8, 10, 11, 9, 14, 15 | 0d |  |
| 17 | 2 | **Construct and set up space** |  | 102.5d | 2014-05-08 | 2014-09-29 | 16 | 0d |  |
| 18 | 2.1 | **Prep phone system** |  | 5d | 2014-05-08 | 2014-05-15 | 16 | 93.5d |  |
| 19 | 2.1.1 | Review phone system requirements |  | 3d | 2014-05-08 | 2014-05-13 |  | 93.5d | 0d |
| 20 | 2.1.2 | Order new phone numbers |  | 1d | 2014-05-13 | 2014-05-14 | 19 | 93.5d | 0d |
| 21 | 2.1.3 | Order long-distance service |  | 1d | 2014-05-14 | 2014-05-15 | 20 | 93.5d | 0d |
| 22 | 2.1.4 | Phone lines ordered | milestone | 0d | 2014-05-15 | 2014-05-15 | 21 | 93.5d | 87.5d |
| 23 | 2.2 | **Design and construction** |  | 98.5d | 2014-05-08 | 2014-09-23 |  | 0d |  |
| 24 | 2.2.1 | **Design space** |  | 66d | 2014-05-08 | 2014-08-08 |  | 0d |  |
| 25 | 2.2.1.1 | Design office space |  | 25d | 2014-05-08 | 2014-06-12 | 16 | 0d |  |
| 26 | 2.2.1.2 | Prepare drawings |  | 5d | 2014-06-12 | 2014-06-19 | 25 | 0d |  |
| 27 | 2.2.1.3 | Design IT infrastructure |  | 10d | 2014-06-19 | 2014-07-03 | 26 | 0d |  |
| 28 | 2.2.1.4 | Obtain final budget estimates |  | 10d | 2014-07-03 | 2014-07-17 | 27 | 0d |  |
| 29 | 2.2.1.5 | Sign off on plans |  | 1d | 2014-07-17 | 2014-07-18 | 28 | 0d |  |
| 30 | 2.2.1.6 | Obtain permits |  | 3w | 2014-07-18 | 2014-08-08 | 29 | 0d |  |

| ID | WBS | Task | Type | Duration | Start | Finish | Predecessors | Total slack | Free slack |
| --- | --- | --- | --- | --- | --- | --- | --- | --- | --- |
| 31 | 2.2.2 | **Construction** |  | 20d | 2014-08-08 | 2014-09-05 | 30 | 0d |  |
| 32 | 2.2.2.1 | Demolish walls |  | 5d | 2014-08-08 | 2014-08-15 |  | 0d |  |
| 33 | 2.2.2.2 | Construct new walls |  | 15d | 2014-08-15 | 2014-09-05 | 32 | 0d |  |
| 34 | 2.2.2.3 | Elec, mech, HVAC |  | 15d | 2014-08-15 | 2014-09-05 | 32 | 0d |  |
| 35 | 2.2.3 | **Walkthrough and repair** |  | 12.5d | 2014-09-05 | 2014-09-23 | 34, 33 | 0d |  |
| 36 | 2.2.3.1 | Walkthrough office |  | 4h | 2014-09-05 | 2014-09-05 |  | 0d |  |
| 37 | 2.2.3.2 | Repair issues |  | 5d | 2014-09-08 | 2014-09-12 | 36 | 0d |  |
| 38 | 2.2.3.3 | Schedule open house for employees |  | 1d | 2014-09-15 | 2014-09-15 | 37 | 9d | 5d |
| 39 | 2.2.3.4 | Clean new office |  | 1d | 2014-09-15 | 2014-09-15 | 37 | 0d |  |
| 40 | 2.2.3.5 | Construction complete | milestone | 0d | 2014-09-15 | 2014-09-15 | 39 | 0d |  |
| 41 | 2.2.3.6 | Open house |  | 1d | 2014-09-23 | 2014-09-23 | 40FS+5d, 38 | 4d |  |
| 42 | 2.3 | **Set up services** |  | 10d | 2014-07-03 | 2014-07-17 | 16FS+2mo | 52.5d |  |
| 43 | 2.3.1 | Order change of address labels |  | 1d | 2014-07-03 | 2014-07-04 |  | 61.5d |  |
| 44 | 2.3.2 | Obtain estimates from signage companies |  | 7d | 2014-07-03 | 2014-07-14 |  | 52.5d | 0d |
| 45 | 2.3.3 | Order signage |  | 3d | 2014-07-14 | 2014-07-17 | 44 | 52.5d |  |
| 46 | 2.3.4 | Arrange external maintenance |  | 5d | 2014-07-03 | 2014-07-10 |  | 57.5d |  |
| 47 | 2.3.5 | Arrange for trash disposal |  | 1d | 2014-07-03 | 2014-07-04 |  | 61.5d |  |
| 48 | 2.3.6 | Arrange for cleaning service |  | 1d | 2014-07-03 | 2014-07-04 |  | 61.5d |  |
| 49 | 2.3.7 | Arrange for recycling |  | 1d | 2014-07-03 | 2014-07-04 |  | 61.5d |  |
| 50 | 2.3.8 | Order security system |  | 2d | 2014-07-03 | 2014-07-07 |  | 60.5d |  |
| 51 | 2.3.9 | Send change of address to vendors, customers, supscriptions |  | 1d | 2014-07-03 | 2014-07-04 |  | 61.5d |  |
| 52 | 2.3.10 | Notify all leasers of equipment move |  | 1d | 2014-07-03 | 2014-07-04 |  | 61.5d |  |
| 53 | 2.3.11 | Order checks with new address |  | 1d | 2014-07-03 | 2014-07-04 |  | 61.5d |  |
| 54 | 2.3.12 | Schedule disconnection of utilities |  | 1d | 2014-07-03 | 2014-07-04 |  | 61.5d |  |

| ID | WBS | Task | Type | Duration | Start | Finish | Predecessors | Total slack | Free slack |
| --- | --- | --- | --- | --- | --- | --- | --- | --- | --- |
| 55 | 2.4 | **Create office assignment layout** |  | 31d | 2014-05-08 | 2014-06-20 |  | 71.5d |  |
| 56 | 2.4.1 | Assign office spaces |  | 5d | 2014-06-12 | 2014-06-19 | 25 | 70.5d | 0d |
| 57 | 2.4.2 | Assign new phone numbers, extensions |  | 2d | 2014-05-08 | 2014-05-12 |  | 98.5d | 0d |
| 58 | 2.4.3 | Create new office extension directory |  | 1d | 2014-05-12 | 2014-05-13 | 57 | 98.5d | 0d |
| 59 | 2.4.4 | Create new office layout map |  | 1d | 2014-06-19 | 2014-06-20 | 56 | 70.5d | 0d |
| 60 | 2.4.5 | Create new fax cover sheet |  | 1d | 2014-05-13 | 2014-05-14 | 58 | 98.5d |  |
| 61 | 2.4.6 | Office plan complete | milestone | 0d | 2014-06-20 | 2014-06-20 | 59, 58 | 70.5d | 0d |
| 62 | 2.5 | **Order new stationery** |  | 1d | 2014-06-20 | 2014-06-23 | 61 | 70.5d |  |
| 63 | 2.5.1 | Order new letterhead and envelopes |  | 1d | 2014-06-20 | 2014-06-23 |  | 70.5d |  |
| 64 | 2.5.2 | Order new business cards |  | 1d | 2014-06-20 | 2014-06-23 |  | 70.5d |  |
| 65 | 2.5.3 | Order new business forms |  | 1d | 2014-06-20 | 2014-06-23 |  | 70.5d |  |
| 66 | 2.5.4 | Get shipping labels |  | 1d | 2014-06-20 | 2014-06-23 |  | 70.5d |  |
| 67 | 2.5.5 | Create map to location |  | 1d | 2014-06-20 | 2014-06-23 |  | 70.5d |  |
| 68 | 2.5.6 | Notify post office of change of address |  | 1d | 2014-06-20 | 2014-06-23 |  | 70.5d |  |
| 69 | 2.5.7 | Update company website with new information |  | 1d | 2014-06-20 | 2014-06-23 |  | 70.5d |  |
| 70 | 2.6 | **Hire movers** |  | 13d | 2014-06-05 | 2014-06-24 | 16FS+1mo | 69.5d |  |
| 71 | 2.6.1 | Obtain estimates from moving companies |  | 12d | 2014-06-05 | 2014-06-23 |  | 69.5d | 0d |
| 72 | 2.6.2 | Choose moving company |  | 1d | 2014-06-23 | 2014-06-24 | 71 | 69.5d |  |
| 73 | 2.7 | **Obtain insurance** |  | 10d | 2014-09-16 | 2014-09-29 | 40 | 0d |  |
| 74 | 2.7.1 | Appraise assets |  | 3d | 2014-09-16 | 2014-09-18 |  | 0d |  |
| 75 | 2.7.2 | Obtain quotes for insurance |  | 6d | 2014-09-19 | 2014-09-26 | 74 | 0d |  |
| 76 | 2.7.3 | Purchase insurance |  | 1d | 2014-09-29 | 2014-09-29 | 75 | 0d |  |
| 77 | 2.7.4 | **Pre-move tasks** |  | 4d | 2014-09-16 | 2014-09-19 |  | 6d |  |
| 78 | 2.7.4.1 | Install phone system |  | 4d | 2014-09-16 | 2014-09-19 | 22 | 6d |  |
| 79 | 3 | Construction and prep complete | milestone | 0d | 2014-09-29 | 2014-09-29 | 17, 72, 76, 55 | 0d |  |

| ID | WBS | Task | Type | Duration | Start | Finish | Predecessors | Total slack |
| --- | --- | --- | --- | --- | --- | --- | --- | --- |
| 80 | 4 | **Move** |  | 9d | 2014-09-30 | 2014-10-10 | 79, 42 | 0d |
| 81 | 4.1 | Inventory office |  | 5d | 2014-09-30 | 2014-10-06 |  | 0d |
| 82 | 4.2 | Distribute new keys, cards |  | 1d | 2014-09-30 | 2014-09-30 |  | 8d |
| 83 | 4.3 | Collect old keys, cards |  | 1d | 2014-09-30 | 2014-09-30 |  | 4d |
| 84 | 4.4 | Pack and move |  | 4d | 2014-10-07 | 2014-10-10 | 83, 81 | 0d |
| 85 | 4.5 | Move complete | milestone | 0d | 2014-10-10 | 2014-10-10 | 81, 82, 63, 64, 65, 68, 69, 54, 84 | 0d |
| 86 | 5 | **Post-Move** |  | 9d | 2014-10-13 | 2014-10-23 | 85 | 0d |
| 87 | 5.1 | Check for damage and missing items |  | 9d | 2014-10-13 | 2014-10-23 |  | 0d |
| 88 | 5.2 | Schedule phone training |  | 1d | 2014-10-13 | 2014-10-13 |  | 8d |
| 89 | 5.3 | Schedule security training |  | 1d | 2014-10-13 | 2014-10-13 |  | 8d |
| 90 | 5.4 | Schedule fire drill |  | 1d | 2014-10-13 | 2014-10-13 |  | 8d |
| 91 | 5.5 | Schedule open house for clients |  | 1d | 2014-10-13 | 2014-10-13 |  | 8d |
| 92 | 5.6 | Office move complete | milestone | 0d | 2014-10-23 | 2014-10-23 | 85, 87, 88, 89, 90, 91 | 0d |
