# Office Move

Schedule from MS Project, 2014-01-07 to 2014-09-24, costs in $.

## Calendars

- Standard: Mon-Fri 08:00-12:00, 13:00-17:00; Sat-Sun off.

## Resources

| Resource | Unit | Rate |
| --- | --- | --- |
| Relo PM |  | 90 |
| Office manager |  | 70 |
| Telecom admin |  | 70 |
| Network mgr |  | 90 |
| Mailroom |  | 50 |
| Accounting mgr |  | 90 |
| Local phone company |  |  |
| Cleaning service |  |  |
| Webmaster |  | 70 |
| Movers |  |  |
| Architect |  | 90 |
| Lodging |  |  |
| Airfare |  |  |
| Mileage |  |  |
| Cheese | Pound | 5 |
| Wine | Gallon | 6 |
| Brochure | Per | 3 |
| Relo Assistant |  | 60 |

## Schedule

| ID | WBS | Task | Type | Duration | Start | Finish | Predecessors | Total slack | Free slack | Resources | Work | Cost |
| --- | --- | --- | --- | --- | --- | --- | --- | --- | --- | --- | --- | --- |
| 1 | 1 | **Planning Move** |  | 75.5d | 2014-01-07 | 2014-04-22 |  | 0d |  |  | 944h | 82,160 |
| 2 | 1.1 | **Document requirements** |  | 32d | 2014-01-07 | 2014-02-19 |  | 0d |  |  | 304h | 27,360 |
| 3 | 1.1.1 | Identify physical requirements |  | 28d | 2014-01-07 | 2014-02-13 |  | 0d |  | Relo PM | 224h | 20,160 |
| 4 | 1.1.2 | Draft the budget |  | 10d | 2014-02-05 | 2014-02-18 | 3FS-2.5% | 24.5d | 0d | Relo PM | 80h | 7,200 |
| 5 | 1.1.3 | Review requirements and budget |  | 1d | 2014-02-19 | 2014-02-19 | 4 | 154.5d |  |  |  |  |
| 6 | 1.2 | **Choose new location** |  | 75.5d | 2014-01-07 | 2014-04-22 |  | 28d |  |  | 440h | 38,400 |
| 7 | 1.2.1 | **Evaluate build sites** |  | 0d | 2014-01-07 | 2014-01-07 |  | 186.5d |  |  |  |  |
| 8 | 1.2.1.1 | Identify potential build sites | inactive | 20d | 2014-01-07 | 2014-02-03 |  | 66.5d | 0d | Relo PM | 160h | 14,400 |
| 9 | 1.2.1.2 | Identify construction needs | inactive | 30d | 2014-02-04 | 2014-03-17 | 8 | 66.5d | 0d | Relo PM | 240h | 21,600 |
| 10 | 1.2.1.3 | Select site | inactive | 10d | 2014-03-18 | 2014-03-31 | 9 | 66.5d | 0d | Relo PM | 80h | 7,200 |
| 11 | 1.2.1.4 | Finalize purchase | inactive | 60d | 2014-04-01 | 2014-06-23 | 10 | 66.5d |  | Relo PM | 480h | 43,200 |
| 12 | 1.2.2 | **Evaluate lease sites** |  | 47.5d | 2014-02-14 | 2014-04-22 |  | 0d |  |  | 440h | 38,400 |
| 13 | 1.2.2.1 | Identify potential sites |  | 20d | 2014-02-14 | 2014-03-13 | 3 | 0d |  | Relo PM | 160h | 14,400 |
| 14 | 1.2.2.2 | Identify tenant improvements |  | 7.5d | 2014-03-14 | 2014-03-25 | 13 | 0d |  | Office manager; Relo PM | 120h | 9,600 |
| 15 | 1.2.2.3 | Select site |  | 10d | 2014-03-25 | 2014-04-08 | 14, 4 | 0d |  | Relo PM | 80h | 7,200 |
| 16 | 1.2.2.4 | Finalize lease |  | 10d | 2014-04-08 | 2014-04-22 | 15 | 0d |  | Relo PM | 80h | 7,200 |
| 17 | 1.3 | **Identify costs** |  | 20d | 2014-03-25 | 2014-04-22 |  | 0d |  |  | 160h | 12,800 |
| 18 | 1.3.1 | Obtain estimates for tenant improvements |  | 10d | 2014-03-25 | 2014-04-08 | 14 | 5d | 0d | Office manager | 80h | 5,600 |
| 19 | 1.3.2 | Identify additional costs (furniture, equipment) |  | 10d | 2014-04-08 | 2014-04-22 | 15 | 0d |  | Relo PM | 80h | 7,200 |
| 20 | 1.4 | Hire contractors for major tenant improvements |  | 5d | 2014-04-08 | 2014-04-15 | 18 | 5d |  | Relo PM | 40h | 3,600 |
| 21 | 1.5 | Planning complete | milestone | 0d | 2014-04-22 | 2014-04-22 | 13, 15, 16, 14, 19, 20 | 0d |  |  |  |  |
| 22 | 2 | **Construct and set up space** |  | 93d? | 2014-04-22 | 2014-08-29 | 21 | 0d |  |  | 888h | 68,240 |
| 23 | 2.1 | **Prep phone system** |  | 5d? | 2014-04-22 | 2014-04-29 | 21 | 88d |  |  | 40h | 2,800 |
| 24 | 2.1.1 | Review phone system requirements |  | 3d | 2014-04-22 | 2014-04-25 |  | 88d | 0d | Telecom admin | 24h | 1,680 |
| 25 | 2.1.2 | Order new phone numbers |  | 1d | 2014-04-25 | 2014-04-28 | 24 | 88d | 0d | Telecom admin | 8h | 560 |
| 26 | 2.1.3 | Order long-distance service |  | 1d? | 2014-04-28 | 2014-04-29 | 25 | 88d | 0d | Telecom admin | 8h | 560 |
| 27 | 2.1.4 | Phone lines ordered | milestone | 0d | 2014-04-29 | 2014-04-29 | 26 | 88d |  |  |  |  |

| ID | WBS | Task | Type | Duration | Start | Finish | Predecessors | Total slack | Free slack | Resources | Work | Cost |
| --- | --- | --- | --- | --- | --- | --- | --- | --- | --- | --- | --- | --- |
| 28 | 2.2 | **Design and construction** |  | 93d? | 2014-04-22 | 2014-08-29 |  | 0d |  |  | 344h | 28,080 |
| 29 | 2.2.1 | **Design space** |  | 66d? | 2014-04-22 | 2014-07-23 |  | 0d |  |  | 320h | 26,800 |
| 30 | 2.2.1.1 | Design office space |  | 25d? | 2014-04-22 | 2014-05-27 | 21 | 0d |  | Office manager [50%]; Architect | 200h | 16,000 |
| 31 | 2.2.1.2 | Prepare drawings |  | 5d | 2014-05-27 | 2014-06-03 | 30 | 0d |  | Architect | 40h | 3,600 |
| 32 | 2.2.1.3 | Design IT infrastructure |  | 10d | 2014-06-03 | 2014-06-17 | 31 | 0d |  | Network mgr | 80h | 7,200 |
| 33 | 2.2.1.4 | Obtain final budget estimates |  | 10d | 2014-06-17 | 2014-07-01 | 32 | 0d |  |  |  |  |
| 34 | 2.2.1.5 | Sign off on plans |  | 1d | 2014-07-01 | 2014-07-02 | 33 | 0d |  |  |  |  |
| 35 | 2.2.1.6 | Obtain permits |  | 3w | 2014-07-02 | 2014-07-23 | 34 | 0d |  |  |  |  |
| 36 | 2.2.2 | **Construction** |  | 20d | 2014-07-23 | 2014-08-20 | 35 | 0d |  |  |  |  |
| 37 | 2.2.2.1 | Demolish walls |  | 5d | 2014-07-23 | 2014-07-30 |  | 0d |  |  |  |  |
| 38 | 2.2.2.2 | Construct new walls |  | 15d | 2014-07-30 | 2014-08-20 | 37 | 0d |  |  |  |  |
| 39 | 2.2.2.3 | Elec, mech, HVAC |  | 15d | 2014-07-30 | 2014-08-20 | 37 | 0d |  |  |  |  |
| 40 | 2.2.3 | **Walkthrough and repair** |  | 7d | 2014-08-20 | 2014-08-29 | 39, 38 | 0d |  |  | 24h | 1,280 |
| 41 | 2.2.3.1 | Repair issues |  | 5d | 2014-08-20 | 2014-08-27 |  | 0d |  |  |  |  |
| 42 | 2.2.3.2 | Schedule open house for employees |  | 1d | 2014-08-20 | 2014-08-21 |  | 6d |  | Relo PM; Office manager | 16h | 1,280 |
| 43 | 2.2.3.3 | Clean new office |  | 1d | 2014-08-27 | 2014-08-28 | 41 | 0d |  | Cleaning service | 8h |  |
| 44 | 2.2.3.4 | Construction complete | milestone | 0d | 2014-08-28 | 2014-08-28 | 43 | 0d |  |  |  |  |
| 45 | 2.2.3.5 | Open house |  | 1d | 2014-08-28 | 2014-08-29 | 44 | 0d |  |  |  |  |
| 46 | 2.3 | **Set up services** |  | 10d | 2014-06-17 | 2014-07-01 | 21FS+2mo | 43d |  |  | 200h | 13,680 |
| 47 | 2.3.1 | Order change of address labels |  | 1d | 2014-06-17 | 2014-06-18 |  | 52d |  | Mailroom | 8h | 400 |
| 48 | 2.3.2 | Obtain estimates from signage companies |  | 7d | 2014-06-17 | 2014-06-26 |  | 43d | 0d | Office manager | 56h | 3,920 |
| 49 | 2.3.3 | Order signage |  | 3d | 2014-06-26 | 2014-07-01 | 48 | 43d |  | Office manager | 24h | 1,680 |
| 50 | 2.3.4 | Arrange external maintenance |  | 5d | 2014-06-17 | 2014-06-24 |  | 48d |  | Office manager | 40h | 2,800 |
| 51 | 2.3.5 | Arrange for trash disposal |  | 1d | 2014-06-17 | 2014-06-18 |  | 52d |  | Office manager | 8h | 560 |
| 52 | 2.3.6 | Arrange for cleaning service |  | 1d | 2014-06-17 | 2014-06-18 |  | 52d |  | Office manager | 8h | 560 |
| 53 | 2.3.7 | Arrange for recycling |  | 1d | 2014-06-17 | 2014-06-18 |  | 52d |  | Office manager | 8h | 560 |
| 54 | 2.3.8 | Order security system |  | 2d | 2014-06-17 | 2014-06-19 |  | 51d |  | Office manager | 16h | 1,120 |
| 55 | 2.3.9 | Send change of address to vendors, customers, supscriptions |  | 1d | 2014-06-17 | 2014-06-18 |  | 52d |  | Mailroom | 8h | 400 |
| 56 | 2.3.10 | Notify all leasers of equipment move |  | 1d | 2014-06-17 | 2014-06-18 |  | 52d |  | Office manager | 8h | 560 |
| 57 | 2.3.11 | Order checks with new address |  | 1d | 2014-06-17 | 2014-06-18 |  | 52d |  | Office manager | 8h | 560 |
| 58 | 2.3.12 | Schedule disconnection of utilities |  | 1d | 2014-06-17 | 2014-06-18 |  | 52d |  | Office manager | 8h | 560 |

| ID | WBS | Task | Type | Duration | Start | Finish | Predecessors | Total slack | Free slack | Resources | Work | Cost |
| --- | --- | --- | --- | --- | --- | --- | --- | --- | --- | --- | --- | --- |
| 59 | 2.4 | **Create office assignment layout** |  | 31d | 2014-04-22 | 2014-06-04 |  | 62d |  |  | 72h | 5,040 |
| 60 | 2.4.1 | Assign office spaces |  | 5d | 2014-05-27 | 2014-06-03 | 30 | 61d | 0d | Office manager | 40h | 2,800 |
| 61 | 2.4.2 | Assign new phone numbers, extensions |  | 2d | 2014-04-22 | 2014-04-24 |  | 89d | 0d | Telecom admin | 16h | 1,120 |
| 62 | 2.4.3 | Create new office extension directory |  | 1d | 2014-04-24 | 2014-04-25 | 61 | 89d | 0d |  |  |  |
| 63 | 2.4.4 | Create new office layout map |  | 1d | 2014-06-03 | 2014-06-04 | 60 | 61d | 0d | Office manager | 8h | 560 |
| 64 | 2.4.5 | Create new fax cover sheet |  | 1d | 2014-04-25 | 2014-04-28 | 62 | 89d |  | Office manager | 8h | 560 |
| 65 | 2.4.6 | Office plan complete | milestone | 0d | 2014-06-04 | 2014-06-04 | 63, 62 | 61d | 0d |  |  |  |
| 66 | 2.5 | **Order new stationery** |  | 1d | 2014-06-04 | 2014-06-05 | 65 | 61d |  |  | 48h | 3,200 |
| 67 | 2.5.1 | Order new letterhead and envelopes |  | 1d | 2014-06-04 | 2014-06-05 |  | 61d |  | Office manager | 8h | 560 |
| 68 | 2.5.2 | Order new business cards |  | 1d | 2014-06-04 | 2014-06-05 |  | 61d |  | Office manager | 8h | 560 |
| 69 | 2.5.3 | Order new business forms |  | 1d | 2014-06-04 | 2014-06-05 |  | 61d |  | Office manager | 8h | 560 |
| 70 | 2.5.4 | Get shipping labels |  | 1d | 2014-06-04 | 2014-06-05 |  | 61d |  |  |  |  |
| 71 | 2.5.5 | Create map to location |  | 1d | 2014-06-04 | 2014-06-05 |  | 61d |  | Office manager | 8h | 560 |
| 72 | 2.5.6 | Notify post office of change of address |  | 1d | 2014-06-04 | 2014-06-05 |  | 61d |  | Mailroom | 8h | 400 |
| 73 | 2.5.7 | Update company website with new information |  | 1d | 2014-06-04 | 2014-06-05 |  | 61d |  | Webmaster | 8h | 560 |
| 74 | 2.6 | **Hire movers** |  | 13d | 2014-05-20 | 2014-06-06 | 21FS+1mo | 60d |  |  | 104h | 9,360 |
| 75 | 2.6.1 | Obtain estimates from moving companies |  | 12d | 2014-05-20 | 2014-06-05 |  | 60d | 0d | Relo PM | 96h | 8,640 |
| 76 | 2.6.2 | Choose moving company |  | 1d | 2014-06-05 | 2014-06-06 | 75 | 60d |  | Relo PM | 8h | 720 |
| 77 | 2.7 | **Obtain insurance** |  | 10d | 2014-04-22 | 2014-05-06 |  | 83d |  |  | 80h | 6,080 |
| 78 | 2.7.1 | Appraise assets |  | 3d | 2014-04-22 | 2014-04-25 |  | 83d | 0d | Accounting mgr | 24h | 2,160 |
| 79 | 2.7.2 | Obtain quotes for insurance |  | 6d | 2014-04-25 | 2014-05-05 | 78 | 83d | 0d | Office manager | 48h | 3,360 |
| 80 | 2.7.3 | Purchase insurance |  | 1d | 2014-05-05 | 2014-05-06 | 79 | 83d |  | Office manager | 8h | 560 |
| 81 | 3 | Construction and prep complete | milestone | 0d | 2014-08-29 | 2014-08-29 | 22, 76, 80, 59 | 0d |  |  |  |  |
| 82 | 4 | **Move** |  | 9d | 2014-08-29 | 2014-09-11 | 81 | 0d |  |  | 56h | 3,920 |
| 83 | 4.1 | Inventory office |  | 5d | 2014-08-29 | 2014-09-05 |  | 0d |  | Office manager | 40h | 2,800 |
| 84 | 4.2 | Distribute new keys, cards |  | 1d | 2014-08-29 | 2014-09-01 |  | 8d |  | Office manager | 8h | 560 |
| 85 | 4.3 | Collect old keys, cards |  | 1d | 2014-08-29 | 2014-09-01 |  | 4d |  | Office manager | 8h | 560 |
| 86 | 4.4 | Pack and move |  | 4d | 2014-09-05 | 2014-09-11 | 85, 83 | 0d |  |  |  |  |
| 87 | 4.5 | Move complete | milestone | 0d | 2014-09-11 | 2014-09-11 | 61, 83, 84, 67, 68, 69, 41, 43, 72, 73, 58, 86 | 0d |  |  |  |  |

| ID | WBS | Task | Type | Duration | Start | Finish | Predecessors | Total slack | Resources | Work | Cost |
| --- | --- | --- | --- | --- | --- | --- | --- | --- | --- | --- | --- |
| 88 | 5 | **Pre-move tasks** |  | 4d | 2014-08-29 | 2014-09-04 | 82SS | 14d |  | 32h | 2,240 |
| 89 | 5.1 | Install phone system |  | 4d | 2014-08-29 | 2014-09-04 | 27 | 14d | Telecom admin | 32h | 2,240 |
| 90 | 6 | **Post-Move** |  | 9d | 2014-09-11 | 2014-09-24 | 87 | 0d |  | 104h | 7,440 |
| 91 | 6.1 | Check for damage and missing items |  | 9d | 2014-09-11 | 2014-09-24 |  | 0d | Office manager | 72h | 5,040 |
| 92 | 6.2 | Schedule phone training |  | 1d | 2014-09-11 | 2014-09-12 |  | 8d | Telecom admin | 8h | 560 |
| 93 | 6.3 | Schedule security training |  | 1d | 2014-09-11 | 2014-09-12 |  | 8d | Office manager | 8h | 560 |
| 94 | 6.4 | Schedule fire drill |  | 1d | 2014-09-11 | 2014-09-12 |  | 8d | Office manager | 8h | 560 |
| 95 | 6.5 | Schedule open house for clients |  | 1d | 2014-09-11 | 2014-09-12 |  | 8d | Relo PM | 8h | 720 |
| 96 | 6.6 | Office move complete | milestone | 0d | 2014-09-24 | 2014-09-24 | 87, 91, 92, 93, 94, 95 | 0d |  |  |  |
