# Office Move

Schedule from MS Project, 2013-06-03 to 2014-07-01, costs in $.

## Calendars

- Standard: Mon-Fri 08:00-12:00, 13:00-17:00; Sat-Sun off.

## Resources

| Resource | Unit | Rate |
| --- | --- | --- |
| Relo PM |  | 90 |
| Office manager |  | 70 |
| Telecom admin |  | 70 |
| Network mgr |  | 90 |
| Mailroom |  | 50 |
| Accounting mgr |  | 90 |
| Local phone company |  |  |
| Cleaning service |  |  |
| Webmaster |  | 70 |
| Movers |  |  |
| Architect |  | 90 |
| Lodging |  |  |
| Airfare |  |  |
| Mileage |  |  |
| Cheese | Pound | 5 |
| Wine | Gallon | 6 |
| Brochure | Per | 3 |
| Relo Assistant |  | 60 |
| CIO |  | 120 |
| CEO |  | 120 |
| CFO |  | 120 |

## Schedule

| ID | WBS | Task | Type | Duration | Start | Finish | Predecessors | Total slack | Free slack | Resources | Work | Cost |
| --- | --- | --- | --- | --- | --- | --- | --- | --- | --- | --- | --- | --- |
| 1 | 1 | **Planning Move** |  | 171d | 2013-06-03 | 2014-01-27 |  | 0d |  |  | 884h | 76,760 |
| 2 | 1.1 | **Document requirements** |  | 26.5d | 2013-06-03 | 2013-07-09 |  | 0d |  |  | 244h | 21,960 |
| 3 | 1.1.1 | Identify physical requirements |  | 20d | 2013-06-03 | 2013-06-28 |  | 0d |  | Relo PM | 160h | 14,400 |
| 4 | 1.1.2 | Draft the budget |  | 10d | 2013-06-24 | 2013-07-05 | 3FS-2.5% | 22.5d | 0d | Relo PM | 80h | 7,200 |
| 5 | 1.1.3 | Review requirements and budget |  | 1d | 2013-07-08 | 2013-07-08 | 4 | 255.5d | 0d |  |  |  |
| 6 | 1.1.4 | Present to mgt |  | 4h | 2013-07-09 | 2013-07-09 | 5 | 255.5d |  | Relo PM | 4h | 360 |
| 7 | 1.2 | **Choose new location** |  | 151d | 2013-07-01 | 2014-01-27 |  | 0d |  |  | 440h | 38,400 |
| 8 | 1.2.1 | **Evaluate build sites** | inactive | 120d | 2013-06-03 | 2013-11-15 |  | 162d |  |  | 960h | 86,400 |
| 9 | 1.2.1.1 | Identify potential build sites | inactive | 20d | 2013-06-03 | 2013-06-28 |  | 170d | 0d | Relo PM | 160h | 14,400 |
| 10 | 1.2.1.2 | Identify construction needs | inactive | 30d | 2013-07-01 | 2013-08-09 | 9 | 170d | 0d | Relo PM | 240h | 21,600 |
| 11 | 1.2.1.3 | Select site | inactive | 10d | 2013-08-12 | 2013-08-23 | 10 | 170d | 0d | Relo PM | 80h | 7,200 |
| 12 | 1.2.1.4 | Finalize purchase | inactive | 60d | 2013-08-26 | 2013-11-15 | 11 | 170d |  | Relo PM | 480h | 43,200 |
| 13 | 1.2.2 | **Evaluate lease sites** |  | 151d | 2013-07-01 | 2014-01-27 |  | 0d |  |  | 440h | 38,400 |
| 14 | 1.2.2.1 | Identify potential sites |  | 20d | 2013-07-01 | 2013-07-26 | 3 | 0d |  | Relo PM | 160h | 14,400 |
| 15 | 1.2.2.2 | Identify tenant improvements |  | 7.5d | 2013-07-29 | 2013-08-07 | 14 | 0d |  | Office manager; Relo PM | 120h | 9,600 |
| 16 | 1.2.2.3 | Select site |  | 10d | 2013-08-07 | 2014-01-13 | 15, 4 | 0d |  | Relo PM | 80h | 7,200 |
| 17 | 1.2.2.4 | Finalize lease |  | 10d | 2014-01-14 | 2014-01-27 | 16 | 0d |  | Relo PM | 80h | 7,200 |
| 18 | 1.3 | **Identify costs** |  | 123.5d | 2013-08-07 | 2014-01-27 |  | 0d |  |  | 160h | 12,800 |
| 19 | 1.3.1 | Obtain estimates for tenant improvements |  | 10d | 2013-08-07 | 2014-01-01 | 15 | 13d | 0d | Office manager | 80h | 5,600 |
| 20 | 1.3.2 | Identify additional costs (furniture, equipment) |  | 10d | 2014-01-14 | 2014-01-27 | 16 | 0d |  | Relo PM | 80h | 7,200 |
| 21 | 1.4 | Hire contractors for major tenant improvements |  | 5d | 2014-01-02 | 2014-01-08 | 19 | 13d |  | Relo PM | 40h | 3,600 |
| 22 | 1.5 | Planning complete | milestone | 0d | 2014-01-27 | 2014-01-27 | 14, 16, 17, 15, 20, 21 | 0d |  |  |  |  |
| 23 | 2 | **Construct and set up space** |  | 93d? | 2014-01-28 | 2014-06-05 | 22 | 0d |  |  | 888h | 68,240 |
| 24 | 2.1 | **Prep phone system** |  | 5d? | 2014-01-28 | 2014-02-03 | 22 | 88d |  |  | 40h | 2,800 |
| 25 | 2.1.1 | Review phone system requirements |  | 3d | 2014-01-28 | 2014-01-30 |  | 88d | 0d | Telecom admin | 24h | 1,680 |
| 26 | 2.1.2 | Order new phone numbers |  | 1d | 2014-01-31 | 2014-01-31 | 25 | 88d | 0d | Telecom admin | 8h | 560 |
| 27 | 2.1.3 | Order long-distance service |  | 1d? | 2014-02-03 | 2014-02-03 | 26 | 88d | 0d | Telecom admin | 8h | 560 |
| 28 | 2.1.4 | Phone lines ordered | milestone | 0d | 2014-02-03 | 2014-02-03 | 27 | 88d |  |  |  |  |

| ID | WBS | Task | Type | Duration | Start | Finish | Predecessors | Total slack | Free slack | Resources | Work | Cost |
| --- | --- | --- | --- | --- | --- | --- | --- | --- | --- | --- | --- | --- |
| 29 | 2.2 | **Design and construction** |  | 93d? | 2014-01-28 | 2014-06-05 |  | 0d |  |  | 344h | 28,080 |
| 30 | 2.2.1 | **Design space** |  | 66d? | 2014-01-28 | 2014-04-29 |  | 0d |  |  | 320h | 26,800 |
| 31 | 2.2.1.1 | Design office space |  | 25d? | 2014-01-28 | 2014-03-03 | 22 | 0d |  | Office manager [50%]; Architect | 200h | 16,000 |
| 32 | 2.2.1.2 | Prepare drawings |  | 5d | 2014-03-04 | 2014-03-10 | 31 | 0d |  | Architect | 40h | 3,600 |
| 33 | 2.2.1.3 | Design IT infrastructure |  | 10d | 2014-03-11 | 2014-03-24 | 32 | 0d |  | Network mgr | 80h | 7,200 |
| 34 | 2.2.1.4 | Obtain final budget estimates |  | 10d | 2014-03-25 | 2014-04-07 | 33 | 0d |  |  |  |  |
| 35 | 2.2.1.5 | Sign off on plans |  | 1d | 2014-04-08 | 2014-04-08 | 34 | 0d |  |  |  |  |
| 36 | 2.2.1.6 | Obtain permits |  | 3w | 2014-04-09 | 2014-04-29 | 35 | 0d |  |  |  |  |
| 37 | 2.2.2 | **Construction** |  | 20d | 2014-04-30 | 2014-05-27 | 36 | 0d |  |  |  |  |
| 38 | 2.2.2.1 | Demolish walls |  | 5d | 2014-04-30 | 2014-05-06 |  | 0d |  |  |  |  |
| 39 | 2.2.2.2 | Construct new walls |  | 15d | 2014-05-07 | 2014-05-27 | 38 | 0d |  |  |  |  |
| 40 | 2.2.2.3 | Elec, mech, HVAC |  | 15d | 2014-05-07 | 2014-05-27 | 38 | 0d |  |  |  |  |
| 41 | 2.2.3 | **Walkthrough and repair** |  | 7d | 2014-05-28 | 2014-06-05 | 40, 39 | 0d |  |  | 24h | 1,280 |
| 42 | 2.2.3.1 | Repair issues |  | 5d | 2014-05-28 | 2014-06-03 |  | 0d |  |  |  |  |
| 43 | 2.2.3.2 | Schedule open house for employees |  | 1d | 2014-05-28 | 2014-05-28 |  | 6d |  | Relo PM; Office manager | 16h | 1,280 |
| 44 | 2.2.3.3 | Clean new office |  | 1d | 2014-06-04 | 2014-06-04 | 42 | 0d |  | Cleaning service | 8h |  |
| 45 | 2.2.3.4 | Construction complete | milestone | 0d | 2014-06-04 | 2014-06-04 | 44 | 0d |  |  |  |  |
| 46 | 2.2.3.5 | Open house |  | 1d | 2014-06-05 | 2014-06-05 | 45 | 0d |  |  |  |  |
| 47 | 2.3 | **Set up services** |  | 10d | 2014-03-25 | 2014-04-07 | 22FS+2mo | 43d |  |  | 200h | 13,680 |
| 48 | 2.3.1 | Order change of address labels |  | 1d | 2014-03-25 | 2014-03-25 |  | 52d |  | Mailroom | 8h | 400 |
| 49 | 2.3.2 | Obtain estimates from signage companies |  | 7d | 2014-03-25 | 2014-04-02 |  | 43d | 0d | Office manager | 56h | 3,920 |
| 50 | 2.3.3 | Order signage |  | 3d | 2014-04-03 | 2014-04-07 | 49 | 43d |  | Office manager | 24h | 1,680 |
| 51 | 2.3.4 | Arrange external maintenance |  | 5d | 2014-03-25 | 2014-03-31 |  | 48d |  | Office manager | 40h | 2,800 |
| 52 | 2.3.5 | Arrange for trash disposal |  | 1d | 2014-03-25 | 2014-03-25 |  | 52d |  | Office manager | 8h | 560 |
| 53 | 2.3.6 | Arrange for cleaning service |  | 1d | 2014-03-25 | 2014-03-25 |  | 52d |  | Office manager | 8h | 560 |
| 54 | 2.3.7 | Arrange for recycling |  | 1d | 2014-03-25 | 2014-03-25 |  | 52d |  | Office manager | 8h | 560 |
| 55 | 2.3.8 | Order security system |  | 2d | 2014-03-25 | 2014-03-26 |  | 51d |  | Office manager | 16h | 1,120 |
| 56 | 2.3.9 | Send change of address to vendors, customers, supscriptions |  | 1d | 2014-03-25 | 2014-03-25 |  | 52d |  | Mailroom | 8h | 400 |
| 57 | 2.3.10 | Notify all leasers of equipment move |  | 1d | 2014-03-25 | 2014-03-25 |  | 52d |  | Office manager | 8h | 560 |
| 58 | 2.3.11 | Order checks with new address |  | 1d | 2014-03-25 | 2014-03-25 |  | 52d |  | Office manager | 8h | 560 |
| 59 | 2.3.12 | Schedule disconnection of utilities |  | 1d | 2014-03-25 | 2014-03-25 |  | 52d |  | Office manager | 8h | 560 |

| ID | WBS | Task | Type | Duration | Start | Finish | Predecessors | Total slack | Free slack | Resources | Work | Cost |
| --- | --- | --- | --- | --- | --- | --- | --- | --- | --- | --- | --- | --- |
| 60 | 2.4 | **Create office assignment layout** |  | 31d | 2014-01-28 | 2014-03-11 |  | 62d |  |  | 72h | 5,040 |
| 61 | 2.4.1 | Assign office spaces |  | 5d | 2014-03-04 | 2014-03-10 | 31 | 61d | 0d | Office manager | 40h | 2,800 |
| 62 | 2.4.2 | Assign new phone numbers, extensions |  | 2d | 2014-01-28 | 2014-01-29 |  | 89d | 0d | Telecom admin | 16h | 1,120 |
| 63 | 2.4.3 | Create new office extension directory |  | 1d | 2014-01-30 | 2014-01-30 | 62 | 89d | 0d |  |  |  |
| 64 | 2.4.4 | Create new office layout map |  | 1d | 2014-03-11 | 2014-03-11 | 61 | 61d | 0d | Office manager | 8h | 560 |
| 65 | 2.4.5 | Create new fax cover sheet |  | 1d | 2014-01-31 | 2014-01-31 | 63 | 89d |  | Office manager | 8h | 560 |
| 66 | 2.4.6 | Office plan complete | milestone | 0d | 2014-03-11 | 2014-03-11 | 64, 63 | 61d | 0d |  |  |  |
| 67 | 2.5 | **Order new stationery** |  | 1d | 2014-03-12 | 2014-03-12 | 66 | 61d |  |  | 48h | 3,200 |
| 68 | 2.5.1 | Order new letterhead and envelopes |  | 1d | 2014-03-12 | 2014-03-12 |  | 61d |  | Office manager | 8h | 560 |
| 69 | 2.5.2 | Order new business cards |  | 1d | 2014-03-12 | 2014-03-12 |  | 61d |  | Office manager | 8h | 560 |
| 70 | 2.5.3 | Order new business forms |  | 1d | 2014-03-12 | 2014-03-12 |  | 61d |  | Office manager | 8h | 560 |
| 71 | 2.5.4 | Get shipping labels |  | 1d | 2014-03-12 | 2014-03-12 |  | 61d |  |  |  |  |
| 72 | 2.5.5 | Create map to location |  | 1d | 2014-03-12 | 2014-03-12 |  | 61d |  | Office manager | 8h | 560 |
| 73 | 2.5.6 | Notify post office of change of address |  | 1d | 2014-03-12 | 2014-03-12 |  | 61d |  | Mailroom | 8h | 400 |
| 74 | 2.5.7 | Update company website with new information |  | 1d | 2014-03-12 | 2014-03-12 |  | 61d |  | Webmaster | 8h | 560 |
| 75 | 2.6 | **Hire movers** |  | 13d | 2014-02-25 | 2014-03-13 | 22FS+1mo | 60d |  |  | 104h | 9,360 |
| 76 | 2.6.1 | Obtain estimates from moving companies |  | 12d | 2014-02-25 | 2014-03-12 |  | 60d | 0d | Relo PM | 96h | 8,640 |
| 77 | 2.6.2 | Choose moving company |  | 1d | 2014-03-13 | 2014-03-13 | 76 | 60d |  | Relo PM | 8h | 720 |
| 78 | 2.7 | **Obtain insurance** |  | 10d | 2014-01-28 | 2014-02-10 |  | 83d |  |  | 80h | 6,080 |
| 79 | 2.7.1 | Appraise assets |  | 3d | 2014-01-28 | 2014-01-30 |  | 83d | 0d | Accounting mgr | 24h | 2,160 |
| 80 | 2.7.2 | Obtain quotes for insurance |  | 6d | 2014-01-31 | 2014-02-07 | 79 | 83d | 0d | Office manager | 48h | 3,360 |
| 81 | 2.7.3 | Purchase insurance |  | 1d | 2014-02-10 | 2014-02-10 | 80 | 83d |  | Office manager | 8h | 560 |
| 82 | 3 | Construction and prep complete | milestone | 0d | 2014-06-05 | 2014-06-05 | 23, 77, 81, 60 | 0d |  |  |  |  |
| 83 | 4 | **Move** |  | 9d | 2014-06-06 | 2014-06-18 | 82 | 0d |  |  | 56h | 3,920 |
| 84 | 4.1 | Inventory office |  | 5d | 2014-06-06 | 2014-06-12 |  | 0d |  | Office manager | 40h | 2,800 |
| 85 | 4.2 | Distribute new keys, cards |  | 1d | 2014-06-06 | 2014-06-06 |  | 8d |  | Office manager | 8h | 560 |
| 86 | 4.3 | Collect old keys, cards |  | 1d | 2014-06-06 | 2014-06-06 |  | 4d |  | Office manager | 8h | 560 |
| 87 | 4.4 | Pack and move |  | 4d | 2014-06-13 | 2014-06-18 | 86, 84 | 0d |  |  |  |  |
| 88 | 4.5 | Move complete | milestone | 0d | 2014-06-18 | 2014-06-18 | 62, 84, 85, 68, 69, 70, 42, 44, 73, 74, 59, 87 | 0d |  |  |  |  |

| ID | WBS | Task | Type | Duration | Start | Finish | Predecessors | Total slack | Resources | Work | Cost |
| --- | --- | --- | --- | --- | --- | --- | --- | --- | --- | --- | --- |
| 89 | 5 | **Pre-move tasks** |  | 4d | 2014-06-06 | 2014-06-11 | 83SS | 14d |  | 32h | 2,240 |
| 90 | 5.1 | Install phone system |  | 4d | 2014-06-06 | 2014-06-11 | 28 | 14d | Telecom admin | 32h | 2,240 |
| 91 | 6 | **Post-Move** |  | 9d | 2014-06-19 | 2014-07-01 | 88 | 0d |  | 104h | 7,440 |
| 92 | 6.1 | Check for damage and missing items |  | 9d | 2014-06-19 | 2014-07-01 |  | 0d | Office manager | 72h | 5,040 |
| 93 | 6.2 | Schedule phone training |  | 1d | 2014-06-19 | 2014-06-19 |  | 8d | Telecom admin | 8h | 560 |
| 94 | 6.3 | Schedule security training |  | 1d | 2014-06-19 | 2014-06-19 |  | 8d | Office manager | 8h | 560 |
| 95 | 6.4 | Schedule fire drill |  | 1d | 2014-06-19 | 2014-06-19 |  | 8d | Office manager | 8h | 560 |
| 96 | 6.5 | Schedule open house for clients |  | 1d | 2014-06-19 | 2014-06-19 |  | 8d | Relo PM | 8h | 720 |
| 97 | 6.6 | Office move complete | milestone | 0d | 2014-07-01 | 2014-07-01 | 88, 92, 93, 94, 95, 96 | 0d |  |  |  |
