# Office Move

Schedule from MS Project, 2013-01-07 to 2013-09-25, costs in $, A marks actual dates.

## Calendars

- Standard: Mon-Fri 08:00-12:00, 13:00-17:00; Sat-Sun off.

## Resources

| Resource | Unit | Rate |
| --- | --- | --- |
| Relo PM |  | 90 |
| Office manager |  | 70 |
| Telecom admin |  | 70 |
| Network mgr |  | 90 |
| Mailroom |  | 50 |
| Accounting mgr |  | 90 |
| Local phone company |  |  |
| Cleaning service |  |  |
| Webmaster |  | 70 |
| Movers |  |  |
| Architect |  | 90 |
| Lodging |  |  |
| Airfare |  |  |
| Mileage |  |  |
| Cheese | Pound | 5 |
| Wine | Gallon | 6 |
| Brochure | Per | 3 |

## Schedule

| ID | WBS | Task | Type | Duration | Start | Finish | Predecessors | Complete | Remaining | Total slack | Free slack | Resources | Work | Actual work | Cost | Actual cost |
| --- | --- | --- | --- | --- | --- | --- | --- | --- | --- | --- | --- | --- | --- | --- | --- | --- |
| 1 | 1 | **Planning Move** |  | 80d | 2013-01-07 A | 2013-04-26 |  | 68% | 25.83d | 108d |  |  | 944h | 664h | 82,160 | 57,760 |
| 2 | 1.1 | **Document requirements** |  | 38d | 2013-01-07 A | 2013-02-28 |  | 97% | 0.97d | 149d |  |  | 304h | 304h | 27,360 | 27,360 |
| 3 | 1.1.1 | Identify physical requirements |  | 28d | 2013-01-07 A | 2013-02-14 A |  | 100% |  |  |  | Relo PM | 224h | 224h | 20,160 | 20,160 |
| 4 | 1.1.2 | Draft the budget |  | 10d | 2013-02-14 A | 2013-02-27 A | 3FS-2.5% | 100% |  |  |  | Relo PM | 80h | 80h | 7,200 | 7,200 |
| 5 | 1.1.3 | Review requirements and budget |  | 1d | 2013-02-28 | 2013-02-28 | 4 |  |  | 149d |  |  |  |  |  |  |
| 6 | 1.2 | **Choose new location** |  | 72d | 2013-01-07 A | 2013-04-16 |  | 68% | 22.74d | 116d |  |  | 440h | 320h | 38,400 | 27,600 |
| 7 | 1.2.1 | **Evaluate build sites** |  | 0d | 2013-01-07 | 2013-01-07 |  |  |  | 188d |  |  |  |  |  |  |
| 8 | 1.2.1.1 | Identify potential build sites | inactive | 20d | 2013-01-07 | 2013-02-01 |  |  |  | 68d | 0d | Relo PM | 160h |  | 14,400 |  |
| 9 | 1.2.1.2 | Identify construction needs | inactive | 30d | 2013-02-04 | 2013-03-15 | 8 |  |  | 68d | 0d | Relo PM | 240h |  | 21,600 |  |
| 10 | 1.2.1.3 | Select site | inactive | 10d | 2013-03-18 | 2013-03-29 | 9 |  |  | 68d | 0d | Relo PM | 80h |  | 7,200 |  |
| 11 | 1.2.1.4 | Finalize purchase | inactive | 60d | 2013-04-01 | 2013-06-21 | 10 |  |  | 68d |  | Relo PM | 480h |  | 43,200 |  |
| 12 | 1.2.2 | **Evaluate lease sites** |  | 42d | 2013-02-17 A | 2013-04-16 |  | 68% | 13.26d | 5d |  |  | 440h | 320h | 38,400 | 27,600 |
| 13 | 1.2.2.1 | Identify potential sites |  | 20d | 2013-02-17 A | 2013-03-15 A | 3 | 100% |  |  |  | Relo PM | 160h | 160h | 14,400 | 14,400 |
| 14 | 1.2.2.2 | Identify tenant improvements |  | 7.5d | 2013-03-15 A | 2013-03-26 A | 13 | 100% |  |  |  | Office manager; Relo PM | 120h | 120h | 9,600 | 9,600 |
| 15 | 1.2.2.3 | Select site |  | 10d | 2013-03-20 A | 2013-04-02 | 14, 4 | 50% | 5d | 5d | 0d | Relo PM | 80h | 40h | 7,200 | 3,600 |
| 16 | 1.2.2.4 | Finalize lease |  | 10d | 2013-04-03 | 2013-04-16 | 15 |  |  | 5d | 3d | Relo PM | 80h |  | 7,200 |  |
| 17 | 1.3 | **Identify costs** |  | 20d | 2013-04-01 A | 2013-04-26 |  | 25% | 15d |  |  |  | 160h | 40h | 12,800 | 2,800 |
| 18 | 1.3.1 | Obtain estimates for tenant improvements |  | 10d | 2013-04-01 A | 2013-04-12 | 14 | 50% | 5d | 2d | 0d | Office manager | 80h | 40h | 5,600 | 2,800 |
| 19 | 1.3.2 | Identify additional costs (furniture, equipment) |  | 10d | 2013-04-03 | 2013-04-16 | 15 |  |  | 5d | 3d | Relo PM | 80h |  | 7,200 |  |
| 20 | 1.4 | Hire contractors for major tenant improvements |  | 5d | 2013-04-15 | 2013-04-19 | 18 |  |  | 2d | 0d | Relo PM | 40h |  | 3,600 |  |
| 21 | 1.5 | Planning complete | milestone | 0d | 2013-04-19 | 2013-04-19 | 13, 15, 16, 14, 19, 20 |  |  | 2d | 0d |  |  |  |  |  |
| 22 | 2 | **Construct and set up space** |  | 102d | 2013-04-14 | 2013-08-31 | 21 |  |  |  |  |  | 888h |  | 68,240 |  |
| 23 | 2.1 | **Prep phone system** |  | 5d? | 2013-04-22 | 2013-04-26 | 21 |  |  | 90d |  |  | 40h |  | 2,800 |  |
| 24 | 2.1.1 | Review phone system requirements |  | 3d | 2013-04-22 | 2013-04-24 |  |  |  | 90d | 0d | Telecom admin | 24h |  | 1,680 |  |
| 25 | 2.1.2 | Order new phone numbers |  | 1d | 2013-04-25 | 2013-04-25 | 24 |  |  | 90d | 0d | Telecom admin | 8h |  | 560 |  |
| 26 | 2.1.3 | Order long-distance service |  | 1d? | 2013-04-26 | 2013-04-26 | 25 |  |  | 90d | 0d | Telecom admin | 8h |  | 560 |  |
| 27 | 2.1.4 | Phone lines ordered | milestone | 0d | 2013-04-26 | 2013-04-26 | 26 |  |  | 90d |  |  |  |  |  |  |

| ID | WBS | Task | Type | Duration | Start | Finish | Predecessors | Total slack | Free slack | Resources | Work | Cost |
| --- | --- | --- | --- | --- | --- | --- | --- | --- | --- | --- | --- | --- |
| 28 | 2.2 | **Design and construction** |  | 93d? | 2013-04-22 | 2013-08-28 |  | 2d |  |  | 344h | 28,080 |
| 29 | 2.2.1 | **Design space** |  | 66d? | 2013-04-22 | 2013-07-22 |  | 2d |  |  | 320h | 26,800 |
| 30 | 2.2.1.1 | Design office space |  | 25d? | 2013-04-22 | 2013-05-24 | 21 | 2d | 0d | Office manager [50%]; Architect | 200h | 16,000 |
| 31 | 2.2.1.2 | Prepare drawings |  | 5d | 2013-05-27 | 2013-05-31 | 30 | 2d | 0d | Architect | 40h | 3,600 |
| 32 | 2.2.1.3 | Design IT infrastructure |  | 10d | 2013-06-03 | 2013-06-14 | 31 | 2d | 0d | Network mgr | 80h | 7,200 |
| 33 | 2.2.1.4 | Obtain final budget estimates |  | 10d | 2013-06-17 | 2013-06-28 | 32 | 2d | 0d |  |  |  |
| 34 | 2.2.1.5 | Sign off on plans |  | 1d | 2013-07-01 | 2013-07-01 | 33 | 2d | 0d |  |  |  |
| 35 | 2.2.1.6 | Obtain permits |  | 3w | 2013-07-02 | 2013-07-22 | 34 | 2d | 0d |  |  |  |
| 36 | 2.2.2 | **Construction** |  | 20d | 2013-07-23 | 2013-08-19 | 35 | 2d |  |  |  |  |
| 37 | 2.2.2.1 | Demolish walls |  | 5d | 2013-07-23 | 2013-07-29 |  | 2d | 0d |  |  |  |
| 38 | 2.2.2.2 | Construct new walls |  | 15d | 2013-07-30 | 2013-08-19 | 37 | 2d | 0d |  |  |  |
| 39 | 2.2.2.3 | Elec, mech, HVAC |  | 15d | 2013-07-30 | 2013-08-19 | 37 | 2d | 0d |  |  |  |
| 40 | 2.2.3 | **Walkthrough and repair** |  | 7d | 2013-08-20 | 2013-08-28 | 39, 38 | 2d |  |  | 24h | 1,280 |
| 41 | 2.2.3.1 | Repair issues |  | 5d | 2013-08-20 | 2013-08-26 |  | 2d | 0d |  |  |  |
| 42 | 2.2.3.2 | Schedule open house for employees |  | 1d | 2013-08-20 | 2013-08-20 |  | 8d |  | Relo PM; Office manager | 16h | 1,280 |
| 43 | 2.2.3.3 | Clean new office |  | 1d | 2013-08-27 | 2013-08-27 | 41 | 2d | 0d | Cleaning service | 8h |  |
| 44 | 2.2.3.4 | Construction complete | milestone | 0d | 2013-08-27 | 2013-08-27 | 43 | 2d | 0d |  |  |  |
| 45 | 2.2.3.5 | Open house |  | 1d | 2013-08-28 | 2013-08-28 | 44 | 2d |  |  |  |  |
| 46 | 2.3 | **Set up services** |  | 10d | 2013-06-17 | 2013-06-28 | 21FS+2mo | 45d |  |  | 200h | 13,680 |
| 47 | 2.3.1 | Order change of address labels |  | 1d | 2013-06-17 | 2013-06-17 |  | 54d |  | Mailroom | 8h | 400 |
| 48 | 2.3.2 | Obtain estimates from signage companies |  | 7d | 2013-06-17 | 2013-06-25 |  | 45d | 0d | Office manager | 56h | 3,920 |
| 49 | 2.3.3 | Order signage |  | 3d | 2013-06-26 | 2013-06-28 | 48 | 45d |  | Office manager | 24h | 1,680 |
| 50 | 2.3.4 | Arrange external maintenance |  | 5d | 2013-06-17 | 2013-06-21 |  | 50d |  | Office manager | 40h | 2,800 |
| 51 | 2.3.5 | Arrange for trash disposal |  | 1d | 2013-06-17 | 2013-06-17 |  | 54d |  | Office manager | 8h | 560 |
| 52 | 2.3.6 | Arrange for cleaning service |  | 1d | 2013-06-17 | 2013-06-17 |  | 54d |  | Office manager | 8h | 560 |
| 53 | 2.3.7 | Arrange for recycling |  | 1d | 2013-06-17 | 2013-06-17 |  | 54d |  | Office manager | 8h | 560 |
| 54 | 2.3.8 | Order security system |  | 2d | 2013-06-17 | 2013-06-18 |  | 53d |  | Office manager | 16h | 1,120 |
| 55 | 2.3.9 | Send change of address to vendors, customers, supscriptions |  | 1d | 2013-06-17 | 2013-06-17 |  | 54d |  | Mailroom | 8h | 400 |
| 56 | 2.3.10 | Notify all leasers of equipment move |  | 1d | 2013-06-17 | 2013-06-17 |  | 54d |  | Office manager | 8h | 560 |
| 57 | 2.3.11 | Order checks with new address |  | 1d | 2013-06-17 | 2013-06-17 |  | 54d |  | Office manager | 8h | 560 |
| 58 | 2.3.12 | Schedule disconnection of utilities |  | 1d | 2013-06-17 | 2013-06-17 |  | 54d |  | Office manager | 8h | 560 |

| ID | WBS | Task | Type | Duration | Start | Finish | Predecessors | Total slack | Free slack | Resources | Work | Cost |
| --- | --- | --- | --- | --- | --- | --- | --- | --- | --- | --- | --- | --- |
| 59 | 2.4 | **Create office assignment layout** |  | 36d | 2013-04-15 | 2013-06-03 |  | 64d |  |  | 72h | 5,040 |
| 60 | 2.4.1 | Assign office spaces |  | 5d | 2013-05-27 | 2013-05-31 | 30 | 63d | 0d | Office manager | 40h | 2,800 |
| 61 | 2.4.2 | Assign new phone numbers, extensions |  | 2d | 2013-04-15 | 2013-04-16 |  | 96d | 0d | Telecom admin | 16h | 1,120 |
| 62 | 2.4.3 | Create new office extension directory |  | 1d | 2013-04-17 | 2013-04-17 | 61 | 96d | 0d |  |  |  |
| 63 | 2.4.4 | Create new office layout map |  | 1d | 2013-06-03 | 2013-06-03 | 60 | 63d | 0d | Office manager | 8h | 560 |
| 64 | 2.4.5 | Create new fax cover sheet |  | 1d | 2013-04-18 | 2013-04-18 | 62 | 96d |  | Office manager | 8h | 560 |
| 65 | 2.4.6 | Office plan complete | milestone | 0d | 2013-06-03 | 2013-06-03 | 63, 62 | 63d | 0d |  |  |  |
| 66 | 2.5 | **Order new stationery** |  | 1d | 2013-06-04 | 2013-06-04 | 65 | 63d |  |  | 48h | 3,200 |
| 67 | 2.5.1 | Order new letterhead and envelopes |  | 1d | 2013-06-04 | 2013-06-04 |  | 63d |  | Office manager | 8h | 560 |
| 68 | 2.5.2 | Order new business cards |  | 1d | 2013-06-04 | 2013-06-04 |  | 63d |  | Office manager | 8h | 560 |
| 69 | 2.5.3 | Order new business forms |  | 1d | 2013-06-04 | 2013-06-04 |  | 63d |  | Office manager | 8h | 560 |
| 70 | 2.5.4 | Get shipping labels |  | 1d | 2013-06-04 | 2013-06-04 |  | 63d |  |  |  |  |
| 71 | 2.5.5 | Create map to location |  | 1d | 2013-06-04 | 2013-06-04 |  | 63d |  | Office manager | 8h | 560 |
| 72 | 2.5.6 | Notify post office of change of address |  | 1d | 2013-06-04 | 2013-06-04 |  | 63d |  | Mailroom | 8h | 400 |
| 73 | 2.5.7 | Update company website with new information |  | 1d | 2013-06-04 | 2013-06-04 |  | 63d |  | Webmaster | 8h | 560 |
| 74 | 2.6 | **Hire movers** |  | 13d | 2013-05-20 | 2013-06-05 | 21FS+1mo | 62d |  |  | 104h | 9,360 |
| 75 | 2.6.1 | Obtain estimates from moving companies |  | 12d | 2013-05-20 | 2013-06-04 |  | 62d | 0d | Relo PM | 96h | 8,640 |
| 76 | 2.6.2 | Choose moving company |  | 1d | 2013-06-05 | 2013-06-05 | 75 | 62d |  | Relo PM | 8h | 720 |
| 77 | 2.7 | **Obtain insurance** |  | 10d | 2013-04-15 | 2013-04-26 |  | 90d |  |  | 80h | 6,080 |
| 78 | 2.7.1 | Appraise assets |  | 3d | 2013-04-15 | 2013-04-17 |  | 90d | 0d | Accounting mgr | 24h | 2,160 |
| 79 | 2.7.2 | Obtain quotes for insurance |  | 6d | 2013-04-18 | 2013-04-25 | 78 | 90d | 0d | Office manager | 48h | 3,360 |
| 80 | 2.7.3 | Purchase insurance |  | 1d | 2013-04-26 | 2013-04-26 | 79 | 90d |  | Office manager | 8h | 560 |
| 81 | 3 | Construction and prep complete | milestone | 0d | 2013-08-31 | 2013-08-31 | 22, 76, 80, 59 | 0d |  |  |  |  |
| 82 | 4 | **Move** |  | 9d | 2013-09-02 | 2013-09-12 | 81 | 0d |  |  | 56h | 3,920 |
| 83 | 4.1 | Inventory office |  | 5d | 2013-09-02 | 2013-09-06 |  | 0d |  | Office manager | 40h | 2,800 |
| 84 | 4.2 | Distribute new keys, cards |  | 1d | 2013-09-02 | 2013-09-02 |  | 8d |  | Office manager | 8h | 560 |
| 85 | 4.3 | Collect old keys, cards |  | 1d | 2013-09-02 | 2013-09-02 |  | 4d |  | Office manager | 8h | 560 |
| 86 | 4.4 | Pack and move |  | 4d | 2013-09-09 | 2013-09-12 | 85, 83 | 0d |  |  |  |  |
| 87 | 4.5 | Move complete | milestone | 0d | 2013-09-12 | 2013-09-12 | 61, 83, 84, 67, 68, 69, 41, 43, 72, 73, 58, 86 | 0d |  |  |  |  |

| ID | WBS | Task | Type | Duration | Start | Finish | Predecessors | Total slack | Resources | Work | Cost |
| --- | --- | --- | --- | --- | --- | --- | --- | --- | --- | --- | --- |
| 88 | 5 | **Pre-move tasks** |  | 4d | 2013-09-02 | 2013-09-05 | 82SS | 14d |  | 32h | 2,240 |
| 89 | 5.1 | Install phone system |  | 4d | 2013-09-02 | 2013-09-05 | 27 | 14d | Telecom admin | 32h | 2,240 |
| 90 | 6 | **Post-Move** |  | 9d | 2013-09-13 | 2013-09-25 | 87 | 0d |  | 104h | 7,440 |
| 91 | 6.1 | Check for damage and missing items |  | 9d | 2013-09-13 | 2013-09-25 |  | 0d | Office manager | 72h | 5,040 |
| 92 | 6.2 | Schedule phone training |  | 1d | 2013-09-13 | 2013-09-13 |  | 8d | Telecom admin | 8h | 560 |
| 93 | 6.3 | Schedule security training |  | 1d | 2013-09-13 | 2013-09-13 |  | 8d | Office manager | 8h | 560 |
| 94 | 6.4 | Schedule fire drill |  | 1d | 2013-09-13 | 2013-09-13 |  | 8d | Office manager | 8h | 560 |
| 95 | 6.5 | Schedule open house for clients |  | 1d | 2013-09-13 | 2013-09-13 |  | 8d | Relo PM | 8h | 720 |
| 96 | 6.6 | Office move complete | milestone | 0d | 2013-09-25 | 2013-09-25 | 87, 91, 92, 93, 94, 95 | 0d |  |  |  |
