# Office Move

Schedule from MS Project, 2014-06-10 to 2015-02-16, costs in $.

## Calendars

- Standard: Mon-Fri 08:00-12:00, 13:00-17:00; Sat-Sun off.

## Resources

| Resource | Unit | Rate |
| --- | --- | --- |
| Relo PM |  | 90 |
| Office manager |  | 70 |
| Telecom admin |  | 70 |
| Network mgr |  | 90 |
| Mailroom |  | 50 |
| Accounting mgr |  | 90 |
| Local phone company |  |  |
| Cleaning service |  |  |
| Webmaster |  | 70 |
| Movers |  |  |
| Architect |  | 90 |
| Lodging |  |  |
| Airfare |  |  |
| Mileage |  |  |
| Cheese | Pound | 5 |
| Wine | Gallon | 6 |
| Brochure | Per | 3 |

## Schedule

| ID | WBS | Task | Type | Duration | Start | Finish | Predecessors | Baseline start | Baseline finish | Baseline duration | Total slack | Free slack | Resources | Work | Cost | Baseline cost |
| --- | --- | --- | --- | --- | --- | --- | --- | --- | --- | --- | --- | --- | --- | --- | --- | --- |
| 1 | 1 | **Planning Move** |  | 83.5d | 2014-06-10 | 2014-10-03 |  | 2013-01-07 | 2013-04-26 | 80d | 0d |  |  | 872h | 75,360 | 82,160 |
| 2 | 1.1 | **Document requirements** |  | 29d | 2014-06-10 | 2014-07-18 |  | 2013-01-07 | 2013-02-14 | 29d | 0d |  |  | 304h | 27,360 | 27,360 |
| 3 | 1.1.1 | Identify physical requirements |  | 28d | 2014-06-10 | 2014-07-17 |  | 2013-01-07 | 2013-02-13 | 28d | 0d |  | Relo PM | 224h | 20,160 | 20,160 |
| 4 | 1.1.2 | Draft the budget |  | 10d | 2014-06-10 | 2014-06-23 |  | 2013-01-07 | 2013-01-18 | 10d | 45.5d | 18d | Relo PM | 80h | 7,200 | 7,200 |
| 5 | 1.1.3 | Review requirements and budget |  | 1d | 2014-07-18 | 2014-07-18 | 4, 3 | 2013-02-14 | 2013-02-14 | 1d | 150.5d |  |  |  |  |  |
| 6 | 1.2 | **Choose new location** |  | 42.5d | 2014-07-18 | 2014-09-16 |  | 2013-02-14 | 2013-04-22 | 47.5d | 0d |  |  | 400h | 34,800 | 38,400 |
| 7 | 1.2.1 | **Evaluate lease sites** |  | 42.5d | 2014-07-18 | 2014-09-16 |  | 2013-02-14 | 2013-04-22 | 47.5d | 0d |  |  | 400h | 34,800 | 38,400 |
| 8 | 1.2.1.1 | Identify potential sites |  | 20d | 2014-07-18 | 2014-08-14 | 3 | 2013-02-14 | 2013-03-13 | 20d | 0d |  | Relo PM | 160h | 14,400 | 14,400 |
| 9 | 1.2.1.2 | Identify tenant improvements |  | 7.5d | 2014-08-15 | 2014-08-26 | 8 | 2013-03-14 | 2013-03-25 | 7.5d | 0d |  | Office manager; Relo PM | 120h | 9,600 | 9,600 |
| 10 | 1.2.1.3 | Select site |  | 10d | 2014-08-26 | 2014-09-09 | 9, 4 | 2013-03-25 | 2013-04-08 | 10d | 0d |  | Relo PM | 80h | 7,200 | 7,200 |
| 11 | 1.2.1.4 | Finalize lease |  | 5d | 2014-09-09 | 2014-09-16 | 10 | 2013-04-08 | 2013-04-22 | 10d | 0d |  | Relo PM | 40h | 3,600 | 7,200 |
| 12 | 1.3 | **Identify costs** |  | 17d | 2014-09-09 | 2014-10-02 |  | 2013-04-01 | 2013-04-26 | 20d | 1d |  |  | 160h | 12,480 | 12,800 |
| 13 | 1.3.1 | Obtain estimates for tenant improvements |  | 12d | 2014-09-16 | 2014-10-02 | 9, 11 | 2013-03-25 | 2013-04-08 | 10d | 0d |  | Office manager | 96h | 6,720 | 5,600 |
| 14 | 1.3.2 | Identify additional costs (furniture, equipment) |  | 8d | 2014-09-09 | 2014-09-19 | 10 | 2013-04-08 | 2013-04-22 | 10d | 10d |  | Relo PM | 64h | 5,760 | 7,200 |
| 15 | 1.4 | Hire contractors for major tenant improvements |  | 1d | 2014-10-02 | 2014-10-03 | 13 | 2013-04-08 | 2013-04-15 | 5d | 0d |  | Relo PM | 8h | 720 | 3,600 |
| 16 | 1.5 | Planning complete | milestone | 0d | 2014-10-03 | 2014-10-03 | 8, 10, 11, 9, 14, 15 | 2013-04-22 | 2013-04-22 | 0d | 0d |  |  |  |  |  |
| 17 | 2 | **Construct and set up space** |  | 78d | 2014-10-03 | 2015-01-21 | 16 | 2013-04-22 | 2013-08-22 | 88d | 0d |  |  | 848h | 65,440 | 68,240 |
| 18 | 2.1 | **Prep phone system** |  | 5d | 2014-10-03 | 2014-10-10 | 16 | 2013-04-22 | 2013-04-29 | 5d | 73d |  |  | 40h | 2,800 | 2,800 |
| 19 | 2.1.1 | Review phone system requirements |  | 3d | 2014-10-03 | 2014-10-08 |  | 2013-04-22 | 2013-04-25 | 3d | 73d | 0d | Telecom admin | 24h | 1,680 | 1,680 |
| 20 | 2.1.2 | Order new phone numbers |  | 1d | 2014-10-08 | 2014-10-09 | 19 | 2013-04-25 | 2013-04-26 | 1d | 73d | 0d | Telecom admin | 8h | 560 | 560 |
| 21 | 2.1.3 | Order long-distance service |  | 1d | 2014-10-09 | 2014-10-10 | 20 | 2013-04-26 | 2013-04-29 | 1d | 73d | 0d | Telecom admin | 8h | 560 | 560 |
| 22 | 2.1.4 | Phone lines ordered | milestone | 0d | 2014-10-10 | 2014-10-10 | 21 | 2013-04-29 | 2013-04-29 |  | 73d |  |  |  |  |  |
| 23 | 2.2 | **Design and construction** |  | 78d | 2014-10-03 | 2015-01-21 |  | 2013-04-22 | 2013-08-22 | 88d | 0d |  |  | 304h | 25,280 | 28,080 |
| 24 | 2.2.1 | **Design space** |  | 51d | 2014-10-03 | 2014-12-15 |  | 2013-04-22 | 2013-07-16 | 61d | 0d |  |  | 280h | 24,000 | 26,800 |
| 25 | 2.2.1.1 | Design office space |  | 15d | 2014-10-03 | 2014-10-24 | 16 | 2013-04-22 | 2013-05-27 | 25d | 0d |  | Office manager [50%]; Architect | 160h | 13,200 | 16,000 |
| 26 | 2.2.1.2 | Prepare drawings |  | 5d | 2014-10-24 | 2014-10-31 | 25 | 2013-05-27 | 2013-06-03 | 5d | 5d |  | Architect | 40h | 3,600 | 3,600 |
| 27 | 2.2.1.3 | Design IT infrastructure |  | 10d | 2014-10-24 | 2014-11-07 | 25 | 2013-05-27 | 2013-06-10 | 10d | 0d |  | Network mgr | 80h | 7,200 | 7,200 |
| 28 | 2.2.1.4 | Obtain final budget estimates |  | 10d | 2014-11-07 | 2014-11-21 | 27, 26 | 2013-06-10 | 2013-06-24 | 10d | 0d |  |  |  |  |  |
| 29 | 2.2.1.5 | Sign off on plans |  | 1d | 2014-11-21 | 2014-11-24 | 28 | 2013-06-24 | 2013-06-25 | 1d | 0d |  |  |  |  |  |
| 30 | 2.2.1.6 | Obtain permits |  | 3w | 2014-11-24 | 2014-12-15 | 29 | 2013-06-25 | 2013-07-16 | 3w | 0d |  |  |  |  |  |

| ID | WBS | Task | Type | Duration | Start | Finish | Predecessors | Baseline start | Baseline finish | Baseline duration | Total slack | Free slack | Resources | Work | Cost | Baseline cost |
| --- | --- | --- | --- | --- | --- | --- | --- | --- | --- | --- | --- | --- | --- | --- | --- | --- |
| 31 | 2.2.2 | **Construction** |  | 20d | 2014-12-15 | 2015-01-12 | 30 | 2013-07-16 | 2013-08-13 | 20d | 0d |  |  |  |  |  |
| 32 | 2.2.2.1 | Demolish walls |  | 5d | 2014-12-15 | 2014-12-22 |  | 2013-07-16 | 2013-07-23 | 5d | 0d |  |  |  |  |  |
| 33 | 2.2.2.2 | Construct new walls |  | 15d | 2014-12-22 | 2015-01-12 | 32 | 2013-07-23 | 2013-08-13 | 15d | 0d |  |  |  |  |  |
| 34 | 2.2.2.3 | Elec, mech, HVAC |  | 10d | 2014-12-22 | 2015-01-05 | 32 | 2013-07-23 | 2013-08-06 | 10d | 5d |  |  |  |  |  |
| 35 | 2.2.3 | **Walkthrough and repair** |  | 7d | 2015-01-12 | 2015-01-21 | 34, 33 | 2013-08-13 | 2013-08-22 | 7d | 0d |  |  | 24h | 1,280 | 1,280 |
| 36 | 2.2.3.1 | Repair issues |  | 5d | 2015-01-12 | 2015-01-19 |  | 2013-08-13 | 2013-08-20 | 5d | 0d |  |  |  |  |  |
| 37 | 2.2.3.2 | Schedule open house for employees |  | 1d | 2015-01-12 | 2015-01-13 |  | 2013-08-13 | 2013-08-14 | 1d | 6d |  | Relo PM; Office manager | 16h | 1,280 | 1,280 |
| 38 | 2.2.3.3 | Clean new office |  | 1d | 2015-01-19 | 2015-01-20 | 36 | 2013-08-20 | 2013-08-21 | 1d | 0d |  | Cleaning service | 8h |  |  |
| 39 | 2.2.3.4 | Construction complete | milestone | 0d | 2015-01-20 | 2015-01-20 | 38 | 2013-08-21 | 2013-08-21 |  | 0d |  |  |  |  |  |
| 40 | 2.2.3.5 | Open house |  | 1d | 2015-01-20 | 2015-01-21 | 39 | 2013-08-21 | 2013-08-22 | 1d | 0d |  |  |  |  |  |
| 41 | 2.3 | **Set up services** |  | 10d | 2014-11-28 | 2014-12-12 | 16FS+2mo | 2013-06-17 | 2013-07-01 | 10d | 28d |  |  | 200h | 13,680 | 13,680 |
| 42 | 2.3.1 | Order change of address labels |  | 1d | 2014-11-28 | 2014-12-01 |  | 2013-06-17 | 2013-06-18 | 1d | 37d |  | Mailroom | 8h | 400 | 400 |
| 43 | 2.3.2 | Obtain estimates from signage companies |  | 7d | 2014-11-28 | 2014-12-09 |  | 2013-06-17 | 2013-06-26 | 7d | 28d | 0d | Office manager | 56h | 3,920 | 3,920 |
| 44 | 2.3.3 | Order signage |  | 3d | 2014-12-09 | 2014-12-12 | 43 | 2013-06-26 | 2013-07-01 | 3d | 28d |  | Office manager | 24h | 1,680 | 1,680 |
| 45 | 2.3.4 | Arrange external maintenance |  | 5d | 2014-11-28 | 2014-12-05 |  | 2013-06-17 | 2013-06-24 | 5d | 33d |  | Office manager | 40h | 2,800 | 2,800 |
| 46 | 2.3.5 | Arrange for trash disposal |  | 1d | 2014-11-28 | 2014-12-01 |  | 2013-06-17 | 2013-06-18 | 1d | 37d |  | Office manager | 8h | 560 | 560 |
| 47 | 2.3.6 | Arrange for cleaning service |  | 1d | 2014-11-28 | 2014-12-01 |  | 2013-06-17 | 2013-06-18 | 1d | 37d |  | Office manager | 8h | 560 | 560 |
| 48 | 2.3.7 | Arrange for recycling |  | 1d | 2014-11-28 | 2014-12-01 |  | 2013-06-17 | 2013-06-18 | 1d | 37d |  | Office manager | 8h | 560 | 560 |
| 49 | 2.3.8 | Order security system |  | 2d | 2014-11-28 | 2014-12-02 |  | 2013-06-17 | 2013-06-19 | 2d | 36d |  | Office manager | 16h | 1,120 | 1,120 |
| 50 | 2.3.9 | Send change of address to vendors, customers, supscriptions |  | 1d | 2014-11-28 | 2014-12-01 |  | 2013-06-17 | 2013-06-18 | 1d | 37d |  | Mailroom | 8h | 400 | 400 |
| 51 | 2.3.10 | Notify all leasers of equipment move |  | 1d | 2014-11-28 | 2014-12-01 |  | 2013-06-17 | 2013-06-18 | 1d | 37d |  | Office manager | 8h | 560 | 560 |
| 52 | 2.3.11 | Order checks with new address |  | 1d | 2014-11-28 | 2014-12-01 |  | 2013-06-17 | 2013-06-18 | 1d | 37d |  | Office manager | 8h | 560 | 560 |
| 53 | 2.3.12 | Schedule disconnection of utilities |  | 1d | 2014-11-28 | 2014-12-01 |  | 2013-06-17 | 2013-06-18 | 1d | 37d |  | Office manager | 8h | 560 | 560 |
| 54 | 2.4 | **Create office assignment layout** |  | 21d | 2014-10-03 | 2014-11-03 |  | 2013-04-22 | 2013-06-04 | 31d | 57d |  |  | 72h | 5,040 | 5,040 |
| 55 | 2.4.1 | Assign office spaces |  | 5d | 2014-10-24 | 2014-10-31 | 25 | 2013-05-27 | 2013-06-03 | 5d | 56d | 0d | Office manager | 40h | 2,800 | 2,800 |
| 56 | 2.4.2 | Assign new phone numbers, extensions |  | 2d | 2014-10-03 | 2014-10-07 |  | 2013-04-22 | 2013-04-24 | 2d | 74d | 0d | Telecom admin | 16h | 1,120 | 1,120 |
| 57 | 2.4.3 | Create new office extension directory |  | 1d | 2014-10-07 | 2014-10-08 | 56 | 2013-04-24 | 2013-04-25 | 1d | 74d | 0d |  |  |  |  |
| 58 | 2.4.4 | Create new office layout map |  | 1d | 2014-10-31 | 2014-11-03 | 55 | 2013-06-03 | 2013-06-04 | 1d | 56d | 0d | Office manager | 8h | 560 | 560 |
| 59 | 2.4.5 | Create new fax cover sheet |  | 1d | 2014-10-08 | 2014-10-09 | 57 | 2013-04-25 | 2013-04-26 | 1d | 74d |  | Office manager | 8h | 560 | 560 |
| 60 | 2.4.6 | Office plan complete | milestone | 0d | 2014-11-03 | 2014-11-03 | 58, 57 | 2013-06-04 | 2013-06-04 |  | 56d | 0d |  |  |  |  |

| ID | WBS | Task | Type | Duration | Start | Finish | Predecessors | Baseline start | Baseline finish | Baseline duration | Total slack | Free slack | Resources | Work | Cost | Baseline cost |
| --- | --- | --- | --- | --- | --- | --- | --- | --- | --- | --- | --- | --- | --- | --- | --- | --- |
| 61 | 2.5 | **Order new stationery** |  | 1d | 2014-11-03 | 2014-11-04 | 60 | 2013-06-04 | 2013-06-05 | 1d | 56d |  |  | 48h | 3,200 | 3,200 |
| 62 | 2.5.1 | Order new letterhead and envelopes |  | 1d | 2014-11-03 | 2014-11-04 |  | 2013-06-04 | 2013-06-05 | 1d | 56d |  | Office manager | 8h | 560 | 560 |
| 63 | 2.5.2 | Order new business cards |  | 1d | 2014-11-03 | 2014-11-04 |  | 2013-06-04 | 2013-06-05 | 1d | 56d |  | Office manager | 8h | 560 | 560 |
| 64 | 2.5.3 | Order new business forms |  | 1d | 2014-11-03 | 2014-11-04 |  | 2013-06-04 | 2013-06-05 | 1d | 56d |  | Office manager | 8h | 560 | 560 |
| 65 | 2.5.4 | Get shipping labels |  | 1d | 2014-11-03 | 2014-11-04 |  | 2013-06-04 | 2013-06-05 | 1d | 56d |  |  |  |  |  |
| 66 | 2.5.5 | Create map to location |  | 1d | 2014-11-03 | 2014-11-04 |  | 2013-06-04 | 2013-06-05 | 1d | 56d |  | Office manager | 8h | 560 | 560 |
| 67 | 2.5.6 | Notify post office of change of address |  | 1d | 2014-11-03 | 2014-11-04 |  | 2013-06-04 | 2013-06-05 | 1d | 56d |  | Mailroom | 8h | 400 | 400 |
| 68 | 2.5.7 | Update company website with new information |  | 1d | 2014-11-03 | 2014-11-04 |  | 2013-06-04 | 2013-06-05 | 1d | 56d |  | Webmaster | 8h | 560 | 560 |
| 69 | 2.6 | **Hire movers** |  | 13d | 2014-10-31 | 2014-11-19 | 16FS+1mo | 2013-05-20 | 2013-06-06 | 13d | 45d |  |  | 104h | 9,360 | 9,360 |
| 70 | 2.6.1 | Obtain estimates from moving companies |  | 12d | 2014-10-31 | 2014-11-18 |  | 2013-05-20 | 2013-06-05 | 12d | 45d | 0d | Relo PM | 96h | 8,640 | 8,640 |
| 71 | 2.6.2 | Choose moving company |  | 1d | 2014-11-18 | 2014-11-19 | 70 | 2013-06-05 | 2013-06-06 | 1d | 45d |  | Relo PM | 8h | 720 | 720 |
| 72 | 2.7 | **Obtain insurance** |  | 10d | 2014-10-03 | 2014-10-17 |  | 2013-04-22 | 2013-05-06 | 10d | 68d |  |  | 80h | 6,080 | 6,080 |
| 73 | 2.7.1 | Appraise assets |  | 3d | 2014-10-03 | 2014-10-08 |  | 2013-04-22 | 2013-04-25 | 3d | 68d | 0d | Accounting mgr | 24h | 2,160 | 2,160 |
| 74 | 2.7.2 | Obtain quotes for insurance |  | 6d | 2014-10-08 | 2014-10-16 | 73 | 2013-04-25 | 2013-05-03 | 6d | 68d | 0d | Office manager | 48h | 3,360 | 3,360 |
| 75 | 2.7.3 | Purchase insurance |  | 1d | 2014-10-16 | 2014-10-17 | 74 | 2013-05-03 | 2013-05-06 | 1d | 68d |  | Office manager | 8h | 560 | 560 |
| 76 | 3 | Construction and prep complete | milestone | 0d | 2015-01-21 | 2015-01-21 | 17, 71, 75, 54 | 2013-08-22 | 2013-08-22 |  | 0d |  |  |  |  |  |
| 77 | 4 | **Move** |  | 9d | 2015-01-21 | 2015-02-03 | 76 | 2013-08-22 | 2013-09-04 | 9d | 0d |  |  | 56h | 3,920 | 3,920 |
| 78 | 4.1 | Inventory office |  | 5d | 2015-01-21 | 2015-01-28 |  | 2013-08-22 | 2013-08-29 | 5d | 0d |  | Office manager | 40h | 2,800 | 2,800 |
| 79 | 4.2 | Distribute new keys, cards |  | 1d | 2015-01-21 | 2015-01-22 |  | 2013-08-22 | 2013-08-23 | 1d | 8d |  | Office manager | 8h | 560 | 560 |
| 80 | 4.3 | Collect old keys, cards |  | 1d | 2015-01-21 | 2015-01-22 |  | 2013-08-22 | 2013-08-23 | 1d | 4d |  | Office manager | 8h | 560 | 560 |
| 81 | 4.4 | Pack and move |  | 4d | 2015-01-28 | 2015-02-03 | 80, 78 | 2013-08-29 | 2013-09-04 | 4d | 0d |  |  |  |  |  |
| 82 | 4.5 | Move complete | milestone | 0d | 2015-02-03 | 2015-02-03 | 56, 78, 79, 62, 63, 64, 36, 38, 67, 68, 53, 81 | 2013-09-04 | 2013-09-04 | 0d | 0d |  |  |  |  |  |
| 83 | 5 | **Pre-move tasks** |  | 6d | 2015-01-21 | 2015-01-29 | 77SS | 2013-08-22 | 2013-08-30 | 6d | 12d |  |  | 48h | 3,360 | 3,360 |
| 84 | 5.1 | Install phone system |  | 6d | 2015-01-21 | 2015-01-29 | 22 | 2013-08-22 | 2013-08-30 | 6d | 12d |  | Telecom admin | 48h | 3,360 | 3,360 |

| ID | WBS | Task | Type | Duration | Start | Finish | Predecessors | Baseline start | Baseline finish | Baseline duration | Total slack | Resources | Work | Cost | Baseline cost |
| --- | --- | --- | --- | --- | --- | --- | --- | --- | --- | --- | --- | --- | --- | --- | --- |
| 85 | 6 | **Post-Move** |  | 9d | 2015-02-03 | 2015-02-16 | 82 | 2013-09-04 | 2013-09-17 | 9d | 0d |  | 104h | 7,440 | 7,440 |
| 86 | 6.1 | Check for damage and missing items |  | 9d | 2015-02-03 | 2015-02-16 |  | 2013-09-04 | 2013-09-17 | 9d | 0d | Office manager | 72h | 5,040 | 5,040 |
| 87 | 6.2 | Schedule phone training |  | 1d | 2015-02-03 | 2015-02-04 |  | 2013-09-04 | 2013-09-05 | 1d | 8d | Telecom admin | 8h | 560 | 560 |
| 88 | 6.3 | Schedule security training |  | 1d | 2015-02-03 | 2015-02-04 |  | 2013-09-04 | 2013-09-05 | 1d | 8d | Office manager | 8h | 560 | 560 |
| 89 | 6.4 | Schedule fire drill |  | 1d | 2015-02-03 | 2015-02-04 |  | 2013-09-04 | 2013-09-05 | 1d | 8d | Office manager | 8h | 560 | 560 |
| 90 | 6.5 | Schedule open house for clients |  | 1d | 2015-02-03 | 2015-02-04 |  | 2013-09-04 | 2013-09-05 | 1d | 8d | Relo PM | 8h | 720 | 720 |
| 91 | 6.6 | Office move complete | milestone | 0d | 2015-02-16 | 2015-02-16 | 82, 86, 87, 88, 89, 90 | 2013-09-17 | 2013-09-17 | 0d | 0d |  |  |  |  |
