# Office Move

Schedule from MS Project, 2014-06-10 to 2014-07-03, costs in $.

## Calendars

- Standard: Mon-Fri 08:00-12:00, 13:00-17:00; Sat-Sun off.

## Resources

| Resource | Unit | Rate |
| --- | --- | --- |
| Relo PM |  | 90 |
| Office manager |  | 70 |
| Telecom admin |  | 70 |
| Network mgr |  | 90 |
| Mailroom |  | 50 |
| Accounting mgr |  | 90 |
| Local phone company |  |  |
| Cleaning service |  |  |
| Webmaster |  | 70 |
| Movers |  |  |
| Architect |  | 90 |
| Lodging |  |  |
| Airfare |  |  |
| Mileage |  |  |
| Cheese | Pound | 5 |
| Wine | Gallon | 6 |
| Brochure | Per | 3 |

## Schedule

| ID | WBS | Task | Type | Duration | Start | Finish | Predecessors | Baseline start | Baseline finish | Baseline duration | Total slack | Resources | Work | Cost | Baseline cost |
| --- | --- | --- | --- | --- | --- | --- | --- | --- | --- | --- | --- | --- | --- | --- | --- |
| 1 | 1 | Construction and prep complete | milestone | 0d | 2014-06-10 | 2014-06-10 |  | 2013-08-22 | 2013-08-22 |  | 0d |  |  |  |  |
| 2 | 2 | **Move** |  | 9d | 2014-06-10 | 2014-06-20 | 1 | 2013-08-22 | 2013-09-04 | 9d | 0d |  | 56h | 3,920 | 3,920 |
| 3 | 2.1 | Inventory office |  | 5d | 2014-06-10 | 2014-06-16 |  | 2013-08-22 | 2013-08-29 | 5d | 0d | Office manager | 40h | 2,800 | 2,800 |
| 4 | 2.2 | Distribute new keys, cards |  | 1d | 2014-06-10 | 2014-06-10 |  | 2013-08-22 | 2013-08-23 | 1d | 8d | Office manager | 8h | 560 | 560 |
| 5 | 2.3 | Collect old keys, cards |  | 1d | 2014-06-10 | 2014-06-10 |  | 2013-08-22 | 2013-08-23 | 1d | 4d | Office manager | 8h | 560 | 560 |
| 6 | 2.4 | Pack and move |  | 4d | 2014-06-17 | 2014-06-20 | 5, 3 | 2013-08-29 | 2013-09-04 | 4d | 0d |  |  |  |  |
| 7 | 2.5 | Move complete | milestone | 0d | 2014-06-20 | 2014-06-20 | 3, 4, 6 | 2013-09-04 | 2013-09-04 | 0d | 0d |  |  |  |  |
| 8 | 3 | **Pre-move tasks** |  | 6d | 2014-06-10 | 2014-06-17 | 2SS | 2013-08-22 | 2013-08-30 | 6d | 12d |  | 48h | 3,360 | 3,360 |
| 9 | 3.1 | Install phone system |  | 6d | 2014-06-10 | 2014-06-17 |  | 2013-08-22 | 2013-08-30 | 6d | 12d | Telecom admin | 48h | 3,360 | 3,360 |
| 10 | 4 | **Post-Move** |  | 9d | 2014-06-23 | 2014-07-03 | 7 | 2013-09-04 | 2013-09-17 | 9d | 0d |  | 104h | 7,440 | 7,440 |
| 11 | 4.1 | Check for damage and missing items |  | 9d | 2014-06-23 | 2014-07-03 |  | 2013-09-04 | 2013-09-17 | 9d | 0d | Office manager | 72h | 5,040 | 5,040 |
| 12 | 4.2 | Schedule phone training |  | 1d | 2014-06-23 | 2014-06-23 |  | 2013-09-04 | 2013-09-05 | 1d | 8d | Telecom admin | 8h | 560 | 560 |
| 13 | 4.3 | Schedule security training |  | 1d | 2014-06-23 | 2014-06-23 |  | 2013-09-04 | 2013-09-05 | 1d | 8d | Office manager | 8h | 560 | 560 |
| 14 | 4.4 | Schedule fire drill |  | 1d | 2014-06-23 | 2014-06-23 |  | 2013-09-04 | 2013-09-05 | 1d | 8d | Office manager | 8h | 560 | 560 |
| 15 | 4.5 | Schedule open house for clients |  | 1d | 2014-06-23 | 2014-06-23 |  | 2013-09-04 | 2013-09-05 | 1d | 8d | Relo PM | 8h | 720 | 720 |
| 16 | 4.6 | Office move complete | milestone | 0d | 2014-07-03 | 2014-07-03 | 7, 11, 12, 13, 14, 15 | 2013-09-17 | 2013-09-17 | 0d | 0d |  |  |  |  |
