# Office Move

Schedule from MS Project, 2014-06-02 to 2015-08-24, status date 2014-09-12, costs in $, A marks actual dates.

## Calendars

- Standard: Mon-Fri 08:00-12:00, 13:00-17:00; Sat-Sun off.

## Resources

| Resource | Group | Unit | Rate |
| --- | --- | --- | --- |
| Relo PM |  |  | 90 |
| Office manager |  |  | 80 |
| Telecom admin |  |  | 70 |
| Network mgr |  |  | 80 |
| Mailroom |  |  | 40 |
| Accounting mgr |  |  | 90 |
| Phone company | External |  |  |
| Cleaning service | External |  | 40 |
| Webmaster |  |  | 70 |
| Movers | External |  | 50 |
| Architect | External |  | 90 |
| Lodging |  |  |  |
| Airfare |  |  |  |
| Mileage |  |  |  |
| Meals |  |  |  |
| System admin |  |  | 70 |
| Network admin |  |  | 75 |
| System mgr |  |  | 90 |
| Relo Assistant |  |  | 60 |
| Wine |  | Gallon | 6 |
| Brochure |  | Piece | 2.5 |
| Packet |  | Per | 1.2 |
| Keycard |  | Card | 3.75 |

## Schedule

| ID | WBS | Task | Type | Duration | Start | Finish | Predecessors | Complete | Remaining | Baseline start | Baseline finish | Baseline duration | Total slack | Free slack | Resources | Work | Actual work | Cost | Baseline cost | Actual cost |
| --- | --- | --- | --- | --- | --- | --- | --- | --- | --- | --- | --- | --- | --- | --- | --- | --- | --- | --- | --- | --- |
| 1 | 1 | **Planning Move** |  | 92.5d | 2014-06-02 A | 2014-10-08 |  | 75% | 22.86d | 2014-06-02 | 2014-09-26 | 85d | 214.5d |  |  | 926h | 764h | 71,300 | 82,120 | 58,260 |
| 2 | 1.1 | **Document requirements** |  | 29.5d | 2014-06-02 A | 2014-07-11 A |  | 100% |  | 2014-06-02 | 2014-07-15 | 31.5d |  |  |  | 298h | 298h | 22,780 | 25,840 | 22,780 |
| 3 | 1.1.1 | Identify physical requirements |  | 17d | 2014-06-02 A | 2014-06-24 A |  | 100% |  | 2014-06-02 | 2014-06-27 | 20d |  |  | Relo PM [50%]; Relo Assistant [50%]; Office manager [50%] | 204h | 204h | 15,640 | 18,400 | 15,640 |
| 4 | 1.1.2 | Draft the budget |  | 9d | 2014-06-18 A | 2014-06-30 A | 3FS-2.5% | 100% |  | 2014-06-23 | 2014-07-04 | 10d |  |  | Relo PM [50%]; Relo Assistant [50%] | 72h | 72h | 5,400 | 6,000 | 5,400 |
| 5 | 1.1.3 | **Mgt meeting** |  | 8.5d | 2014-07-01 A | 2014-07-11 A |  | 100% |  | 2014-07-07 | 2014-07-15 | 6.5d |  |  |  | 22h | 22h | 1,740 | 1,440 | 1,740 |
| 6 | 1.1.3.1 | Prepare mgt presentation |  | 3d | 2014-07-01 A | 2014-07-03 A | 4 | 100% |  | 2014-07-07 | 2014-07-09 | 3d |  |  | Relo PM [25%] | 6h | 6h | 540 | 540 | 540 |
| 7 | 1.1.3.2 | Prepare materials |  | 4d | 2014-07-07 A | 2014-07-10 A | 6 | 100% |  | 2014-07-10 | 2014-07-14 | 3d |  |  | Relo Assistant [25%]; Relo PM [25%] | 16h | 16h | 1,200 | 900 | 1,200 |
| 8 | 1.1.3.3 | Present to mgt |  | 4h | 2014-07-11 A | 2014-07-11 A | 7 | 100% |  | 2014-07-15 | 2014-07-15 | 4h |  |  |  |  |  |  |  |  |
| 9 | 1.2 | **Choose new location** |  | 48d | 2014-07-14 A | 2014-09-17 |  | 93% | 3.35d | 2014-07-07 | 2014-09-12 | 50d | 4d |  |  | 328h | 304h | 26,520 | 28,680 | 24,360 |
| 10 | 1.2.1 | **Evaluate lease sites** |  | 48d | 2014-07-14 A | 2014-09-17 |  | 93% | 3.35d | 2014-07-07 | 2014-09-12 | 50d | 4d |  |  | 328h | 304h | 26,520 | 28,680 | 24,360 |
| 11 | 1.2.1.1 | Identify potential sites |  | 15d | 2014-07-14 A | 2014-08-01 A | 4 | 100% |  | 2014-07-07 | 2014-07-30 | 18d |  |  | Relo PM [50%]; Relo Assistant [50%] | 120h | 120h | 9,000 | 10,440 | 9,000 |
| 12 | 1.2.1.2 | Identify tenant improvements |  | 10d | 2014-08-04 A | 2014-08-15 A | 11 | 100% |  | 2014-07-31 | 2014-08-08 | 7d |  |  | Relo PM [50%]; Relo Assistant [50%] | 64h | 64h | 4,560 | 3,840 | 4,560 |
| 13 | 1.2.1.3 | Select site |  | 8d | 2014-08-18 A | 2014-08-27 A | 12, 4 | 100% |  | 2014-08-11 | 2014-08-22 | 10d |  |  | Relo PM | 64h | 64h | 5,760 | 7,200 | 5,760 |
| 14 | 1.2.1.4 | Finalize lease |  | 10d | 2014-08-28 A | 2014-09-17 | 13 | 70% | 3d | 2014-08-25 | 2014-09-12 | 10d | 4d |  | Relo PM | 80h | 56h | 7,200 | 7,200 | 5,040 |
| 15 | 1.3 | **Identify costs** |  | 47.5d | 2014-08-04 A | 2014-10-08 |  | 51% | 23.27d | 2014-07-31 | 2014-09-26 | 42d | 214.5d |  |  | 260h | 162h | 18,400 | 24,000 | 11,120 |
| 16 | 1.3.1 | Estimate costs for tenant improvements |  | 5d | 2014-08-18 A | 2014-08-22 A | 12 | 100% |  | 2014-08-11 | 2014-08-22 | 10d |  |  | Office manager; Relo Assistant | 80h | 80h | 5,600 | 11,200 | 5,600 |
| 17 | 1.3.2 | Identify addl costs (furniture, equipment) |  | 20d | 2014-08-04 A | 2014-09-23 | 11 | 65% | 7d | 2014-07-31 | 2014-09-19 | 20d | 0d |  | Relo Assistant [50%] | 80h | 52h | 4,800 | 4,800 | 3,120 |
| 18 | 1.3.3 | Inventory office |  | 25d | 2014-08-20 A | 2014-10-08 | 12 | 30% | 17.5d | 2014-08-11 | 2014-09-26 | 25d | 214.5d |  | Office manager [50%] | 100h | 30h | 8,000 | 8,000 | 2,400 |
| 19 | 1.4 | Planning complete | milestone | 0d | 2014-09-23 | 2014-09-23 | 11, 13, 14, 12, 17 |  |  | 2014-09-19 | 2014-09-19 | 0d | 0d |  |  |  |  |  |  |  |
| 20 | 1.5 | Hire contractors for tenant improvements |  | 5d | 2014-08-25 | 2014-08-29 | 16 |  |  | 2014-08-25 | 2014-08-29 | 5d | 220d | 71.75d | Relo PM | 40h |  | 3,600 | 3,600 |  |
| 21 | 2 | **Prep phone system** |  | 225d | 2014-09-24 | 2015-08-04 | 19 |  |  | 2014-09-22 | 2015-07-31 | 225d | 14d |  |  | 723h |  | 59,020 | 59,020 |  |
| 22 | 2.1 | Review phone system requirements |  | 3d | 2014-09-24 | 2014-09-26 |  |  |  | 2014-09-22 | 2014-09-24 | 3d | 230d | 0d | Telecom admin | 24h |  | 1,680 | 1,680 |  |
| 23 | 2.2 | Order new phone numbers |  | 1d | 2014-09-29 | 2014-09-29 | 22 |  |  | 2014-09-25 | 2014-09-25 | 1d | 230d | 0d | Telecom admin | 8h |  | 560 | 560 |  |
| 24 | 2.3 | Order long-distance service |  | 1d | 2014-09-30 | 2014-09-30 | 23 |  |  | 2014-09-26 | 2014-09-26 | 1d | 230d | 0d | Telecom admin | 8h |  | 560 | 560 |  |
| 25 | 2.4 | Phone lines ordered | milestone | 0d | 2014-09-30 | 2014-09-30 | 24 |  |  | 2014-09-26 | 2014-09-26 | 0d | 230d | 220d |  |  |  |  |  |  |

| ID | WBS | Task | Type | Duration | Start | Finish | Predecessors | Baseline start | Baseline finish | Baseline duration | Total slack | Free slack | Constraint | Resources | Work | Cost | Baseline cost |
| --- | --- | --- | --- | --- | --- | --- | --- | --- | --- | --- | --- | --- | --- | --- | --- | --- | --- |
| 26 | 2.5 | **Design and construction** |  | 81.75d | 2014-09-24 | 2015-01-15 |  | 2014-09-22 | 2015-01-13 | 81.75d | 148.25d |  |  |  | 254h | 21,580 | 21,580 |
| 27 | 2.5.1 | **Design space** |  | 54.75d | 2014-09-24 | 2014-12-09 |  | 2014-09-22 | 2014-12-05 | 54.75d | 148.25d |  |  |  | 230h | 19,900 | 19,900 |
| 28 | 2.5.1.1 | Design office space |  | 13.75d | 2014-09-24 | 2014-10-13 | 19 | 2014-09-22 | 2014-10-09 | 13.75d | 148.25d | 0d |  | Architect | 110h | 9,900 | 9,900 |
| 29 | 2.5.1.2 | Prepare drawings |  | 5d | 2014-10-13 | 2014-10-20 | 28 | 2014-10-09 | 2014-10-16 | 5d | 148.25d | 0d |  | Architect | 40h | 3,600 | 3,600 |
| 30 | 2.5.1.3 | Design IT infrastructure |  | 10d | 2014-10-20 | 2014-11-03 | 29 | 2014-10-16 | 2014-10-30 | 10d | 148.25d | 0d |  | Network mgr | 80h | 6,400 | 6,400 |
| 31 | 2.5.1.4 | Obtain final budget estimates |  | 10d | 2014-11-03 | 2014-11-17 | 30 | 2014-10-30 | 2014-11-13 | 10d | 148.25d | 0d |  |  |  |  |  |
| 32 | 2.5.1.5 | Sign off on plans |  | 1d | 2014-11-17 | 2014-11-18 | 31 | 2014-11-13 | 2014-11-14 | 1d | 148.25d | 0d |  |  |  |  |  |
| 33 | 2.5.1.6 | Obtain permits |  | 3w | 2014-11-18 | 2014-12-09 | 32 | 2014-11-14 | 2014-12-05 | 3w | 148.25d | 0d |  |  |  |  |  |
| 34 | 2.5.2 | **Construction** |  | 20d | 2014-12-09 | 2015-01-06 | 33 | 2014-12-05 | 2015-01-02 | 20d | 148.25d |  |  |  |  |  |  |
| 35 | 2.5.2.1 | Demolish walls |  | 5d | 2014-12-09 | 2014-12-16 | 20 | 2014-12-05 | 2014-12-12 | 5d | 148.25d | 0d |  |  |  |  |  |
| 36 | 2.5.2.2 | Construct new walls |  | 15d | 2014-12-16 | 2015-01-06 | 35 | 2014-12-12 | 2015-01-02 | 15d | 148.25d | 0d |  |  |  |  |  |
| 37 | 2.5.2.3 | Elec, mech, HVAC |  | 15d | 2014-12-16 | 2015-01-06 | 35 | 2014-12-12 | 2015-01-02 | 15d | 148.25d | 0d |  |  |  |  |  |
| 38 | 2.5.3 | **Walkthrough and repair** |  | 7d | 2015-01-06 | 2015-01-15 | 37, 36 | 2015-01-02 | 2015-01-13 | 7d | 148.25d |  |  |  | 24h | 1,680 | 1,680 |
| 39 | 2.5.3.1 | Repair issues |  | 5d | 2015-01-06 | 2015-01-13 |  | 2015-01-02 | 2015-01-09 | 5d | 148.25d | 0d |  |  |  |  |  |
| 40 | 2.5.3.2 | Schedule open house for employees |  | 1d | 2015-01-06 | 2015-01-07 |  | 2015-01-02 | 2015-01-05 | 1d | 163.25d |  |  | Relo PM; Office manager | 16h | 1,360 | 1,360 |
| 41 | 2.5.3.3 | Clean new office |  | 1d | 2015-01-13 | 2015-01-14 | 39 | 2015-01-09 | 2015-01-12 | 1d | 148.25d | 0d |  | Cleaning service | 8h | 320 | 320 |
| 42 | 2.5.3.4 | Construction complete | milestone | 0d | 2015-01-14 | 2015-01-14 | 41 | 2015-01-12 | 2015-01-12 | 0d | 157.25d | 0d |  |  |  |  |  |
| 43 | 2.5.3.5 | Open house |  | 1d | 2015-01-14 | 2015-01-15 | 42 | 2015-01-12 | 2015-01-13 | 1d | 157.25d |  |  |  |  |  |  |
| 44 | 2.6 | **Set up services** |  | 10d | 2014-11-19 | 2014-12-02 | 19FS+2mo | 2014-11-17 | 2014-11-28 | 10d | 0d |  |  |  | 200h | 15,360 | 15,360 |
| 45 | 2.6.1 | Order change of address labels |  | 1d | 2014-11-19 | 2014-11-19 |  | 2014-11-17 | 2014-11-17 | 1d | 9d |  |  | Mailroom | 8h | 320 | 320 |
| 46 | 2.6.2 | Obtain estimates from signage companies |  | 7d | 2014-11-19 | 2014-11-27 |  | 2014-11-17 | 2014-11-25 | 7d | 0d |  |  | Office manager | 56h | 4,480 | 4,480 |
| 47 | 2.6.3 | Order signage |  | 3d | 2014-11-28 | 2014-12-02 | 46 | 2014-11-26 | 2014-11-28 | 3d | 0d |  |  | Office manager | 24h | 1,920 | 1,920 |
| 48 | 2.6.4 | Arrange external maintenance |  | 5d | 2014-11-19 | 2014-11-25 |  | 2014-11-17 | 2014-11-21 | 5d | 5d |  |  | Office manager | 40h | 3,200 | 3,200 |
| 49 | 2.6.5 | Arrange for trash disposal |  | 1d | 2014-11-19 | 2014-11-19 |  | 2014-11-17 | 2014-11-17 | 1d | 9d |  |  | Office manager | 8h | 640 | 640 |
| 50 | 2.6.6 | Arrange for cleaning service |  | 1d | 2014-11-19 | 2014-11-19 |  | 2014-11-17 | 2014-11-17 | 1d | 9d |  |  | Office manager | 8h | 640 | 640 |
| 51 | 2.6.7 | Arrange for recycling |  | 1d | 2014-11-19 | 2014-11-19 |  | 2014-11-17 | 2014-11-17 | 1d | 9d |  |  | Office manager | 8h | 640 | 640 |
| 52 | 2.6.8 | Order security system |  | 2d | 2014-11-19 | 2014-11-20 |  | 2014-11-17 | 2014-11-18 | 2d | 8d |  |  | Office manager | 16h | 1,280 | 1,280 |
| 53 | 2.6.9 | Send change of address to vendors, customers, supscriptions |  | 1d | 2014-11-19 | 2014-11-19 |  | 2014-11-17 | 2014-11-17 | 1d | 9d |  |  | Mailroom | 8h | 320 | 320 |
| 54 | 2.6.10 | Notify all leasers of equipment move |  | 1d | 2014-11-19 | 2014-11-19 |  | 2014-11-17 | 2014-11-17 | 1d | 9d |  |  | Office manager | 8h | 640 | 640 |
| 55 | 2.6.11 | Order checks with new address |  | 1d | 2014-11-19 | 2014-11-19 |  | 2014-11-17 | 2014-11-17 | 1d | 9d |  |  | Office manager | 8h | 640 | 640 |
| 56 | 2.6.12 | Schedule disconnection of utilities |  | 1d | 2014-11-19 | 2014-11-19 |  | 2014-11-17 | 2014-11-17 | 1d | 9d |  |  | Office manager | 8h | 640 | 640 |
| 57 | 2.7 | Service setup complete | milestone | 0d | 2014-12-02 | 2015-08-04 | 44 | 2014-11-28 | 2015-07-31 | 0d | 0d |  | start no earlier than 2010-09-20 |  |  |  |  |

| ID | WBS | Task | Type | Duration | Start | Finish | Predecessors | Baseline start | Baseline finish | Baseline duration | Total slack | Free slack | Resources | Work | Cost | Baseline cost |
| --- | --- | --- | --- | --- | --- | --- | --- | --- | --- | --- | --- | --- | --- | --- | --- | --- |
| 58 | 2.8 | **Create office assignment layout** |  | 8.12d | 2014-10-13 | 2014-10-23 |  | 2014-10-09 | 2014-10-21 | 8.12d | 203.12d |  |  | 65h | 5,040 | 5,040 |
| 59 | 2.8.1 | Assign office spaces |  | 5d | 2014-10-13 | 2014-10-20 | 28 | 2014-10-09 | 2014-10-16 | 5d | 203.12d | 0d | Office manager | 40h | 3,200 | 3,200 |
| 60 | 2.8.2 | Assign new phone numbers, extensions |  | 2d | 2014-10-20 | 2014-10-22 | 59 | 2014-10-16 | 2014-10-20 | 2d | 203.12d | 0d | Telecom admin | 16h | 1,120 | 1,120 |
| 61 | 2.8.3 | Create new office extension directory |  | 1d | 2014-10-22 | 2014-10-23 | 60 | 2014-10-20 | 2014-10-21 | 1d | 203.12d | 0d |  |  |  |  |
| 62 | 2.8.4 | Create new office layout map |  | 1d | 2014-10-20 | 2014-10-21 | 59 | 2014-10-16 | 2014-10-17 | 1d | 205.25d | 2.12d | Office manager | 8h | 640 | 640 |
| 63 | 2.8.5 | Create new fax cover sheet |  | 0.12d | 2014-10-23 | 2014-10-23 | 61 | 2014-10-21 | 2014-10-21 | 0.12d | 203.12d | 0d | Office manager | 1h | 80 | 80 |
| 64 | 2.8.6 | Office plan complete | milestone | 0d | 2014-10-23 | 2014-10-23 | 62, 61, 63 | 2014-10-21 | 2014-10-21 | 0d | 203.12d | 0d |  |  |  |  |
| 65 | 2.9 | **Order new stationery** |  | 1.5d | 2014-10-23 | 2014-10-27 | 64 | 2014-10-21 | 2014-10-23 | 1.5d | 205.62d |  |  | 20h | 1,440 | 1,440 |
| 66 | 2.9.1 | Order new letterhead and envelopes |  | 0.25d | 2014-10-23 | 2014-10-24 |  | 2014-10-21 | 2014-10-22 | 0.25d | 205.62d | 0d | Office manager | 2h | 160 | 160 |
| 67 | 2.9.2 | Order new business cards |  | 0.25d | 2014-10-24 | 2014-10-24 | 66 | 2014-10-22 | 2014-10-22 | 0.25d | 205.62d | 0d | Office manager | 2h | 160 | 160 |
| 68 | 2.9.3 | Order new business forms |  | 0.25d | 2014-10-24 | 2014-10-24 | 67 | 2014-10-22 | 2014-10-22 | 0.25d | 205.62d | 0d | Office manager | 2h | 160 | 160 |
| 69 | 2.9.4 | Get shipping labels |  | 0.25d | 2014-10-24 | 2014-10-24 | 68 | 2014-10-22 | 2014-10-22 | 0.25d | 205.62d | 0d | Office manager | 2h | 160 | 160 |
| 70 | 2.9.5 | Create map to location |  | 0.25d | 2014-10-24 | 2014-10-27 | 69 | 2014-10-22 | 2014-10-23 | 0.25d | 205.62d | 0d | Office manager | 2h | 160 | 160 |
| 71 | 2.9.6 | Notify post office of change of address |  | 0.25d | 2014-10-27 | 2014-10-27 | 70 | 2014-10-23 | 2014-10-23 | 0.25d | 205.62d |  | Mailroom | 2h | 80 | 80 |
| 72 | 2.9.7 | Update company website with new information |  | 1d | 2014-10-23 | 2014-10-24 |  | 2014-10-21 | 2014-10-22 | 1d | 206.12d |  | Webmaster | 8h | 560 | 560 |
| 73 | 2.10 | **Hire movers** |  | 13d | 2014-10-22 | 2014-11-07 | 19FS+1mo | 2014-10-20 | 2014-11-05 | 13d | 192d |  |  | 104h | 9,360 | 9,360 |
| 74 | 2.10.1 | Obtain estimates from moving companies |  | 12d | 2014-10-22 | 2014-11-06 |  | 2014-10-20 | 2014-11-04 | 12d | 192d | 0d | Relo PM | 96h | 8,640 | 8,640 |
| 75 | 2.10.2 | Choose moving company |  | 1d | 2014-11-07 | 2014-11-07 | 74 | 2014-11-05 | 2014-11-05 | 1d | 192d |  | Relo PM | 8h | 720 | 720 |
| 76 | 2.11 | **Obtain insurance** |  | 13d | 2014-09-24 | 2014-10-10 |  | 2014-09-22 | 2014-10-08 | 13d | 212d |  |  | 40h | 3,440 | 3,440 |
| 77 | 2.11.1 | Appraise assets |  | 3d | 2014-09-24 | 2014-09-26 |  | 2014-09-22 | 2014-09-24 | 3d | 212d | 0d | Accounting mgr | 24h | 2,160 | 2,160 |
| 78 | 2.11.2 | Obtain quotes for insurance |  | 1d | 2014-09-29 | 2014-10-09 | 77 | 2014-09-25 | 2014-10-07 | 1d | 212d | 0d | Office manager | 8h | 640 | 640 |
| 79 | 2.11.3 | Purchase insurance |  | 1d | 2014-10-10 | 2014-10-10 | 78 | 2014-10-08 | 2014-10-08 | 1d | 212d |  | Office manager | 8h | 640 | 640 |
| 80 | 3 | Construction and prep complete | milestone | 0d | 2015-08-04 | 2015-08-04 | 57, 75, 79, 58 | 2015-07-31 | 2015-07-31 | 0d | 0d |  |  |  |  |  |
| 81 | 4 | **Move** |  | 4d | 2015-08-05 | 2015-08-10 | 80 | 2015-08-03 | 2015-08-06 | 4d | 0d |  |  | 8h | 640 | 640 |
| 82 | 4.1 | Distribute new keys, cards |  | 1d | 2015-08-05 | 2015-08-05 |  | 2015-08-03 | 2015-08-03 | 1d | 3d |  | Office manager | 8h | 640 | 640 |
| 83 | 4.2 | Pack and move |  | 4d | 2015-08-05 | 2015-08-10 | 18 | 2015-08-03 | 2015-08-06 | 4d | 0d |  |  |  |  |  |
| 84 | 4.3 | Move complete | milestone | 0d | 2015-08-10 | 2015-08-10 | 60, 82, 66, 67, 68, 39, 41, 71, 72, 56, 83, 18 | 2015-08-06 | 2015-08-06 | 0d | 0d |  |  |  |  |  |

| ID | WBS | Task | Type | Duration | Start | Finish | Predecessors | Baseline start | Baseline finish | Baseline duration | Total slack | Resources | Work | Cost | Baseline cost |
| --- | --- | --- | --- | --- | --- | --- | --- | --- | --- | --- | --- | --- | --- | --- | --- |
| 85 | 5 | **Pre-move tasks** |  | 4d | 2015-08-05 | 2015-08-10 | 81SS | 2015-08-03 | 2015-08-06 | 4d | 10d |  | 32h | 2,240 | 2,240 |
| 86 | 5.1 | Install phone system |  | 4d | 2015-08-05 | 2015-08-10 | 25 | 2015-08-03 | 2015-08-06 | 4d | 10d | Telecom admin | 32h | 2,240 | 2,240 |
| 87 | 6 | **Post-Move** |  | 10d | 2015-08-11 | 2015-08-24 | 84 | 2015-08-07 | 2015-08-20 | 10d | 0d |  | 96h | 6,960 | 6,960 |
| 88 | 6.1 | Check for damage and missing items |  | 10d | 2015-08-11 | 2015-08-24 |  | 2015-08-07 | 2015-08-20 | 10d | 0d | Office manager [50%]; Relo Assistant [50%] | 72h | 5,040 | 5,040 |
| 89 | 6.2 | Schedule phone training |  | 1d | 2015-08-11 | 2015-08-11 |  | 2015-08-07 | 2015-08-07 | 1d | 9d | Telecom admin | 8h | 560 | 560 |
| 90 | 6.3 | Schedule security training |  | 1d | 2015-08-11 | 2015-08-11 |  | 2015-08-07 | 2015-08-07 | 1d | 9d | Office manager [50%] | 4h | 320 | 320 |
| 91 | 6.4 | Schedule fire drill |  | 1d | 2015-08-11 | 2015-08-11 |  | 2015-08-07 | 2015-08-07 | 1d | 9d | Office manager [50%] | 4h | 320 | 320 |
| 92 | 6.5 | Schedule open house for clients |  | 1d | 2015-08-11 | 2015-08-11 |  | 2015-08-07 | 2015-08-07 | 1d | 9d | Relo PM | 8h | 720 | 720 |
| 93 | 6.6 | Office move complete | milestone | 0d | 2015-08-24 | 2015-08-24 | 84, 88, 89, 90, 91, 92 | 2015-08-20 | 2015-08-20 | 0d | 0d |  |  |  |  |
